# ABP Planificacion

Schedule from MS Project, 2018-09-10 to 2019-05-23, status date 2019-05-24, costs in €, A marks actual dates.

## Calendars

- Estándar: Mon-Fri 09:00-13:00, 15:00-19:00; Sat-Sun off. Exceptions (off unless hours are given): 2019-02-24 09:00-13:00, 15:00-19:00.

## Resources

| Resource | Rate | Cost per use |
| --- | --- | --- |
| Débora Galdeano González | 22 | 22 |
| Marines Ánton Castelló | 18 | 18 |
| María Sánchez Marqués | 20 | 20 |
| Jose Ramon Barea Cecilia | 20 | 20 |
| David Ramón Sevilla | 18 | 18 |
| Jose Vicente Anton Coy | 18 | 18 |
| Todos |  |  |

## Schedule

| ID | WBS | Task | Type | Duration | Start | Finish | Predecessors | Complete | Remaining | Baseline start | Baseline finish | Baseline duration | Total slack | Free slack | Constraint | Resources | Work | Actual work | Cost | Baseline cost | Actual cost | Horas Estimadas |
| --- | --- | --- | --- | --- | --- | --- | --- | --- | --- | --- | --- | --- | --- | --- | --- | --- | --- | --- | --- | --- | --- | --- |
| 1 | 1 | **Hito 0** |  | 22.2d | 2018-09-10 09:00 A | 2018-10-10 10:36 A |  | 100% |  | 2018-09-10 09:00 | 2018-10-10 10:36 | 22.2d |  |  |  |  |  |  |  |  |  |  |
| 2 | 1.1 | **Iteracion 1** |  | 16.2d | 2018-09-10 09:00 A | 2018-10-02 10:36 A |  | 100% |  | 2018-09-10 09:00 | 2018-10-02 10:36 | 16.2d |  |  |  |  |  |  |  |  |  |  |
| 3 | 1.1.1 | [PM]Rellenar documento de Concepto del proyecto |  | 9.6h | 2018-09-10 09:00 A | 2018-09-11 10:36 A |  | 100% |  | 2018-09-10 09:00 | 2018-09-11 10:36 | 9.6h |  |  | start no earlier than 2018-09-10 09:00 |  |  |  |  |  |  |  |
| 4 | 1.1.2 | [PM]Rellenar Version inicial del documento Especificacion |  | 9.6h | 2018-10-01 09:00 A | 2018-10-02 10:36 A |  | 100% |  | 2018-10-01 09:00 | 2018-10-02 10:36 | 9.6h |  |  |  |  |  |  |  |  |  |  |
| 5 | 1.2 | **Iteracion 2** |  | 7.2d | 2018-10-01 09:00 A | 2018-10-10 10:36 A |  | 100% |  | 2018-10-01 09:00 | 2018-10-10 10:36 | 7.2d |  |  |  |  |  |  |  |  |  |  |
| 6 | 1.2.1 | [PM]Completar y Revisar documento Especificacion |  | 9.6h | 2018-10-01 09:00 A | 2018-10-02 10:36 A |  | 100% |  | 2018-10-01 09:00 | 2018-10-02 10:36 | 9.6h |  |  |  |  |  |  |  |  |  |  |
| 7 | 1.2.2 | [PM]Crear WBS del proyecto project |  | 28.8h | 2018-10-01 09:00 A | 2018-10-04 15:48 A |  | 100% |  | 2018-10-01 09:00 | 2018-10-04 15:48 | 28.8h |  |  |  |  |  |  |  |  |  |  |
| 8 | 1.2.3 | [PM]Crear plan general (tareas y precedencias basicas) en project |  | 28.8h | 2018-10-01 09:00 A | 2018-10-04 15:48 A |  | 100% |  | 2018-10-01 09:00 | 2018-10-04 15:48 | 28.8h |  |  |  |  |  |  |  |  |  |  |
| 9 | 1.2.4 | [PM]Elaborar el Presupuesto(hoja de calculo) |  | 57.6h | 2018-10-01 09:00 A | 2018-10-10 10:36 A |  | 100% |  | 2018-10-01 09:00 | 2018-10-10 10:36 | 57.6h |  |  |  |  |  |  |  |  |  |  |
| 10 | 2 | Documento de Especificaciones realizado | milestone | 0d | 2018-10-10 10:36 A | 2018-10-10 10:36 A | 1 | 100% |  | 2018-10-10 10:36 | 2018-10-10 10:36 | 0d |  |  | start no earlier than 2018-10-10 09:00 |  |  |  |  |  |  |  |
| 11 | 3 | **Hito 1** |  | 60d | 2018-10-01 09:00 A | 2018-12-21 19:00 |  | 75% | 14.97d | 2018-10-01 09:00 | 2018-12-21 19:00 | 60d | 109.56d | 0d |  |  | 664.85h | 523.16h | 13,917.74 | 13,917.74 | 11,141.17 |  |
| 12 | 3.1 | **Iteracion 3** |  | 10d | 2018-10-11 09:00 A | 2018-10-24 19:00 |  | 70% | 3.03d | 2018-10-11 09:00 | 2018-10-24 19:00 | 10d | 0d |  | start no earlier than 2018-10-11 09:00 |  | 81.31h | 54.67h | 1,700.68 | 1,700.68 | 1,189.96 |  |
| 13 | 3.1.1 | [V1]Documento de diseño de mecánicas de los NPCs |  | 15h | 2018-10-11 09:00 A | 2018-10-12 18:00 A |  | 100% |  | 2018-10-11 09:00 | 2018-10-12 18:00 | 15h |  |  | must finish on 2018-10-24 19:00 | David Ramón Sevilla [20%]; Débora Galdeano González [12%]; Jose Vicente Anton Coy [20%]; Marines Ánton Castelló [20%] | 10.8h | 10.8h | 215.04 | 215.04 | 215.04 | 14 horas |
| 14 | 3.1.2 | [v1] Documento de diseño de toma de decision: espacio y metodos | inactive | 32h | 2018-10-19 09:00 | 2018-10-24 19:00 | 13 |  |  |  |  |  | 0d |  | must finish on 2018-10-24 19:00 | David Ramón Sevilla [15%]; Jose Vicente Anton Coy [20%]; Marines Ánton Castelló [20%]; Débora Galdeano González [5%] | 19.2h |  | 363 | -0 |  |  |
| 15 | 3.1.3 | [V1]Documento de diseño técnico del motor de IA |  | 37h | 2018-10-18 12:00 | 2018-10-24 19:00 | 14 |  |  | 2018-10-18 12:00 | 2018-10-24 19:00 | 37h | 0d |  | must finish on 2018-10-24 19:00 | David Ramón Sevilla [20%]; Débora Galdeano González [12%]; Jose Vicente Anton Coy [20%]; Marines Ánton Castelló [20%] | 26.64h |  | 510.72 | 510.72 |  |  |
| 16 | 3.1.4 | **[V2]Diseño e implementación b.objetos (1/10)** |  | 0.44d | 2018-10-11 09:00 A | 2018-10-11 12:30 A |  | 100% |  | 2018-10-11 09:00 | 2018-10-11 12:30 | 0.44d |  |  |  | Jose Ramon Barea Cecilia [50%]; María Sánchez Marqués [50%] | 3.5h | 3.5h | 90 | 90 | 90 | 6 horas |
| 17 | 3.1.4.1 | Investigacion |  | 3.5h | 2018-10-11 09:00 A | 2018-10-11 12:30 A |  | 100% |  | 2018-10-11 09:00 | 2018-10-11 12:30 | 3.5h |  |  |  |  |  |  |  |  |  |  |
| 18 | 3.1.4.2 | Diseño |  | 3.5h | 2018-10-11 09:00 A | 2018-10-11 12:30 A |  | 100% |  | 2018-10-11 09:00 | 2018-10-11 12:30 | 3.5h |  |  |  |  |  |  |  |  |  |  |
| 19 | 3.1.5 | **[TDS]Realizar sonidos para el juego (1/7)** |  | 0.36d | 2018-10-11 09:00 A | 2018-10-11 11:51 A |  | 100% |  | 2018-10-11 09:00 | 2018-10-11 11:51 | 0.36d |  |  |  |  | 10.25h | 10.25h | 289.08 | 289.08 | 289.08 | 14 horas |
| 20 | 3.1.5.1 | Síntesis |  | 2.85h | 2018-10-11 09:00 A | 2018-10-11 11:51 A |  | 100% |  | 2018-10-11 09:00 | 2018-10-11 11:51 | 2.85h |  |  |  | David Ramón Sevilla [15%]; Jose Ramon Barea Cecilia [15%]; Débora Galdeano González [15%]; María Sánchez Marqués [15%] | 1.71h | 1.71h | 46.2 | 46.2 | 46.2 |  |
| 21 | 3.1.5.2 | Grabaciones propias |  | 2.85h | 2018-10-11 09:00 A | 2018-10-11 11:51 A |  | 100% |  | 2018-10-11 09:00 | 2018-10-11 11:51 | 2.85h |  |  |  | David Ramón Sevilla [15%]; Jose Ramon Barea Cecilia [15%]; Débora Galdeano González [15%]; María Sánchez Marqués [15%] | 1.71h | 1.71h | 46.2 | 46.2 | 46.2 |  |
| 22 | 3.1.5.3 | Sonidos externos |  | 2.85h | 2018-10-11 09:00 A | 2018-10-11 11:51 A |  | 100% |  | 2018-10-11 09:00 | 2018-10-11 11:51 | 2.85h |  |  |  | David Ramón Sevilla [15%]; Jose Ramon Barea Cecilia [15%]; Débora Galdeano González [15%]; María Sánchez Marqués [15%] | 1.71h | 1.71h | 46.2 | 46.2 | 46.2 |  |
| 23 | 3.1.5.4 | Música |  | 2.85h | 2018-10-11 09:00 A | 2018-10-11 11:51 A |  | 100% |  | 2018-10-11 09:00 | 2018-10-11 11:51 | 2.85h |  |  |  | David Ramón Sevilla [15%]; Jose Ramon Barea Cecilia [15%]; Débora Galdeano González [15%]; María Sánchez Marqués [15%] | 1.71h | 1.71h | 46.2 | 46.2 | 46.2 |  |
| 24 | 3.1.5.5 | Cue Sheet |  | 1.42h | 2018-10-11 09:00 A | 2018-10-11 10:25 A |  | 100% |  | 2018-10-11 09:00 | 2018-10-11 10:25 | 1.42h |  |  |  | David Ramón Sevilla [15%]; Jose Ramon Barea Cecilia [15%]; Débora Galdeano González [15%]; María Sánchez Marqués [15%] | 0.85h | 0.85h | 29.04 | 29.04 | 29.04 |  |
| 25 | 3.1.5.6 | Hoja de metadatos |  | 1.42h | 2018-10-11 09:00 A | 2018-10-11 10:25 A |  | 100% |  | 2018-10-11 09:00 | 2018-10-11 10:25 | 1.42h |  |  |  | David Ramón Sevilla [15%]; Jose Ramon Barea Cecilia [15%]; Débora Galdeano González [15%]; María Sánchez Marqués [15%] | 0.85h | 0.85h | 29.04 | 29.04 | 29.04 |  |
| 26 | 3.1.5.7 | Integración del motor de audio en el juego con prueba de concepto |  | 2.85h | 2018-10-11 09:00 A | 2018-10-11 11:51 A |  | 100% |  | 2018-10-11 09:00 | 2018-10-11 11:51 | 2.85h |  |  |  | David Ramón Sevilla [15%]; Jose Ramon Barea Cecilia [15%]; Débora Galdeano González [15%]; María Sánchez Marqués [15%] | 1.71h | 1.71h | 46.2 | 46.2 | 46.2 |  |
| 27 | 3.1.6 | [RV]Boceto de los personajes (1/2) |  | 15h | 2018-10-11 09:00 A | 2018-10-12 18:00 A |  | 100% |  | 2018-10-11 09:00 | 2018-10-12 18:00 | 15h |  |  | must finish on 2018-10-24 19:00 | Débora Galdeano González [20%] | 3h | 3h | 70.4 | 70.4 | 70.4 | 5 horas |
| 28 | 3.1.7 | [PD]Vídeo con animación del logo de la empresa (1/2) |  | 30h | 2018-10-11 09:00 A | 2018-10-16 17:00 A |  | 100% |  | 2018-10-11 09:00 | 2018-10-16 17:00 | 30h |  |  | must finish on 2018-10-24 19:00 | Jose Ramon Barea Cecilia [30%]; Jose Vicente Anton Coy [20%]; Marines Ánton Castelló [20%]; David Ramón Sevilla [20%] | 27h | 27h | 520.8 | 520.8 | 520.8 | 24 horas |
| 29 | 3.1.8 | [PM]Registrar tiempos y % de realización de tareas en Project |  | 1h | 2018-10-24 18:00 A | 2018-10-24 19:00 A |  | 100% |  | 2018-10-24 18:00 | 2018-10-24 19:00 | 1h |  |  | must finish on 2018-10-24 19:00 | David Ramón Sevilla [2%]; Débora Galdeano González [2%]; Jose Ramon Barea Cecilia [2%]; Jose Vicente Anton Coy [2%]; María Sánchez Marqués [2%]; Marines Ánton Castelló [2%] | 0.12h | 0.12h | 4.64 | 4.64 | 4.64 | 48 minutos |

Notes:
- 13: Falta bocetos o esquemas
- 14: Se mueven a iteraccion 4 por falta de tiempo
- 15: Se mueven a iteraccion 4 por falta de tiempo
- 27: Faltarian los enemigos
- 29: Se han realizado en excel por comodidad, las proximas en toggl

| ID | WBS | Task | Type | Duration | Start | Finish | Predecessors | Complete | Remaining | Baseline start | Baseline finish | Baseline duration | Total slack | Constraint | Deadline | Resources | Work | Actual work | Cost | Baseline cost | Actual cost | Horas Estimadas | Encargados | Horas realizadas |
| --- | --- | --- | --- | --- | --- | --- | --- | --- | --- | --- | --- | --- | --- | --- | --- | --- | --- | --- | --- | --- | --- | --- | --- | --- |
| 30 | 3.2 | **Iteracion 4** |  | 9.1d | 2018-10-25 09:00 A | 2018-11-07 09:48 |  | 99% | 0.06d | 2018-10-25 09:00 | 2018-11-07 09:48 | 9.1d | 0.9d | start no earlier than 2018-10-25 09:00 |  |  | 59.92h | 59.02h | 1,344.23 | 1,344.23 | 1,309.43 |  |  |  |
| 31 | 3.2.1 | [v1] Documento de diseño de toma de decision: espacio y metodos (1/2) |  | 4h | 2018-10-25 09:00 A | 2018-10-25 13:00 A | 13 | 100% |  | 2018-10-25 09:00 | 2018-10-25 13:00 | 4h |  |  | 2018-11-07 19:00 | David Ramón Sevilla [10%]; Jose Vicente Anton Coy [10%]; Marines Ánton Castelló [10%]; Débora Galdeano González [10%] | 1.6h | 1.6h | 38 | 38 | 38 | 32 h | Marines, Debora, David | 4 h |
| 32 | 3.2.2 | [V1]Documento de diseño técnico del motor de IA (1/2) |  | 8h | 2018-10-31 09:00 A | 2018-10-31 19:00 A | 31 | 100% |  | 2018-10-31 09:00 | 2018-10-31 19:00 | 8h |  |  | 2018-11-07 19:00 | David Ramón Sevilla [10%]; Débora Galdeano González [10%]; Jose Vicente Anton Coy [10%]; Marines Ánton Castelló [10%] | 3.2h | 3.2h | 68.4 | 68.4 | 68.4 | 37 h | Marines, Debora, David | 8 h |
| 33 | 3.2.3 | **[V1]Sistema de toma de decisión con Behaviour Trees (1/2)** |  | 1.88d | 2018-10-29 09:00 A | 2018-10-30 18:00 A |  | 100% |  | 2018-10-29 09:00 | 2018-10-30 18:00 | 1.88d |  |  | 2018-11-07 19:00 | David Ramón Sevilla [10%]; Débora Galdeano González [10%]; Jose Vicente Anton Coy [10%]; Marines Ánton Castelló [10%] | 6h | 6h | 121.6 | 121.6 | 121.6 | 51 h | Debora | 15 h |
| 34 | 3.2.3.1 | Investigacion |  | 10h | 2018-10-29 09:00 A | 2018-10-30 11:00 A |  | 100% |  | 2018-10-29 09:00 | 2018-10-30 11:00 | 10h |  | start no earlier than 2018-10-27 09:00 | 2018-11-07 19:00 |  |  |  |  |  |  | 10 h |  | 10 h |
| 35 | 3.2.3.2 | Diseño |  | 5h | 2018-10-30 11:00 A | 2018-10-30 18:00 A | 34 | 100% |  | 2018-10-30 11:00 | 2018-10-30 18:00 | 5h |  |  | 2018-11-07 19:00 |  |  |  |  |  |  | 5 h |  | 5 h |
| 36 | 3.2.3.3 | Implementar | milestone | 0h | 2018-10-30 18:00 A | 2018-10-30 18:00 A | 35 | 100% |  | 2018-10-30 18:00 | 2018-10-30 18:00 | 0h |  |  | 2018-11-07 19:00 |  |  |  |  |  |  | 36 h |  | 0 h |
| 37 | 3.2.4 | [V1]Documento de diseño de mecánicas de los NPCs 2/2 |  | 22h | 2018-10-25 09:00 A | 2018-10-29 17:00 A |  | 100% |  | 2018-10-25 09:00 | 2018-10-29 17:00 | 22h |  | finish no later than 2018-11-07 19:00 | 2018-11-07 19:00 | Débora Galdeano González [10%]; Marines Ánton Castelló [10%]; David Ramón Sevilla [10%]; Jose Vicente Anton Coy [10%] | 8.8h | 8.8h | 174.8 | 174.8 | 174.8 | 22 h | Marines debora david jose vicente | 5 h |
| 38 | 3.2.5 | **[V2]Diseño e implementación b.objetos (2/10)** |  | 0.88d | 2018-10-30 09:00 A | 2018-10-30 18:00 A |  | 100% |  | 2018-10-30 09:00 | 2018-10-30 18:00 | 0.88d |  | finish no later than 2018-11-07 19:00 | 2018-11-07 19:00 | María Sánchez Marqués [10%]; Jose Ramon Barea Cecilia [10%]; David Ramón Sevilla [10%]; Débora Galdeano González [10%]; Jose Vicente Anton Coy [10%]; Marines Ánton Castelló [10%] | 4.2h | 4.2h | 92.8 | 92.8 | 92.8 | 7 h | Jose vicente | 14 h |
| 39 | 3.2.5.1 | Diseño |  | 2h | 2018-10-30 09:00 A | 2018-10-30 11:00 A |  | 100% |  | 2018-10-30 09:00 | 2018-10-30 11:00 | 2h |  | start no earlier than 2018-10-30 09:00 |  |  |  |  |  |  |  |  |  |  |
| 40 | 3.2.5.2 | Implementacion |  | 5h | 2018-10-30 11:00 A | 2018-10-30 18:00 A | 39 | 100% |  | 2018-10-30 11:00 | 2018-10-30 18:00 | 5h |  |  |  |  |  |  |  |  |  |  |  |  |
| 41 | 3.2.6 | **[v2]Diseño e implementacion b.componentes 1** |  | 1.25d | 2018-10-31 09:00 A | 2018-11-01 11:00 A |  | 100% |  | 2018-10-31 09:00 | 2018-11-01 11:00 | 1.25d |  | finish no later than 2018-11-07 19:00 | 2018-11-07 19:00 | David Ramón Sevilla [10%]; Jose Ramon Barea Cecilia [10%]; Jose Vicente Anton Coy [10%]; María Sánchez Marqués [10%]; Marines Ánton Castelló [10%]; Débora Galdeano González [10%] | 6h | 6h | 127.6 | 127.6 | 127.6 | 10 h | Jose ramon, Maria | 6 h |
| 42 | 3.2.6.1 | Investigar |  | 5h | 2018-10-31 09:00 A | 2018-10-31 16:00 A |  | 100% |  | 2018-10-31 09:00 | 2018-10-31 16:00 | 5h |  | start no earlier than 2018-10-31 09:00 |  |  |  |  |  |  |  |  |  |  |
| 43 | 3.2.6.2 | Diseñar |  | 5h | 2018-10-31 16:00 A | 2018-11-01 11:00 A | 42 | 100% |  | 2018-10-31 16:00 | 2018-11-01 11:00 | 5h |  |  |  |  |  |  |  |  |  |  |  |  |
| 44 | 3.2.7 | [v2]Utilización de joints en las mecánicas jugables (1/2) |  | 4h | 2018-10-25 09:00 A | 2018-10-25 13:00 A |  | 100% |  | 2018-10-25 09:00 | 2018-10-25 13:00 | 4h |  |  | 2018-11-07 19:00 | David Ramón Sevilla [10%]; Débora Galdeano González [10%]; Jose Ramon Barea Cecilia [10%]; Jose Vicente Anton Coy [10%]; María Sánchez Marqués [10%]; Marines Ánton Castelló [10%] | 2.4h | 2.4h | 58 | 58 | 58 | 17 h | Jose Ramon | 4 h |
| 45 | 3.2.8 | [V2]Mecánicas básicas entidades sin IA |  | 1h | 2018-10-25 15:00 | 2018-10-25 16:00 | 44 |  |  | 2018-10-25 15:00 | 2018-10-25 16:00 | 1h | 9.38d | finish no later than 2018-11-07 19:00 | 2018-11-07 19:00 | David Ramón Sevilla [15%]; Débora Galdeano González [15%]; Jose Ramon Barea Cecilia [15%]; Jose Vicente Anton Coy [15%]; María Sánchez Marqués [15%]; Marines Ánton Castelló [15%] | 0.9h |  | 34.8 | 34.8 |  | 30 h | Maria, jose vicente | 0 h |
| 46 | 3.2.9 | [RV]Boceto de los personajes 2/3 |  | 15h | 2018-11-02 09:00 A | 2018-11-05 18:00 A |  | 100% |  | 2018-11-02 09:00 | 2018-11-05 18:00 | 15h |  | start no earlier than 2018-11-02 09:00 | 2018-11-07 19:00 | María Sánchez Marqués [5%]; Débora Galdeano González [10%]; Marines Ánton Castelló [5%] | 3h | 3h | 65.6 | 65.6 | 65.6 | 15 h | Debora, Marines | 14 h |
| 47 | 3.2.10 | [PD]Vídeo con animación del logo de la empresa (2/2) |  | 30h | 2018-10-25 09:00 A | 2018-10-30 17:00 A |  | 100% |  | 2018-10-25 09:00 | 2018-10-30 17:00 | 30h |  |  |  | David Ramón Sevilla [10%]; Jose Vicente Anton Coy [10%]; Marines Ánton Castelló [10%] | 9h | 9h | 167.4 | 167.4 | 167.4 | 30 h | David | 1 h |
| 48 | 3.2.11 | **[TDS]Realizar sonidos para el juego 2/7** |  | 0.36d | 2018-10-25 09:00 A | 2018-10-25 11:51 A |  | 100% |  | 2018-10-25 09:00 | 2018-10-25 11:51 | 0.36d |  | finish no later than 2018-11-07 19:00 | 2018-11-07 19:00 | David Ramón Sevilla [15%]; Débora Galdeano González [15%]; María Sánchez Marqués [15%]; Jose Ramon Barea Cecilia [15%] | 11.96h | 11.96h | 335.28 | 335.28 | 335.28 | 15 h | David, Jose ramon, debora, maria | 9 h |
| 49 | 3.2.11.1 | Síntesis |  | 2.85h | 2018-10-25 09:00 A | 2018-10-25 11:51 A |  | 100% |  | 2018-10-25 09:00 | 2018-10-25 11:51 | 2.85h |  |  |  | David Ramón Sevilla [15%]; Jose Ramon Barea Cecilia [15%]; Débora Galdeano González [15%]; María Sánchez Marqués [15%] | 1.71h | 1.71h | 46.2 | 46.2 | 46.2 |  |  |  |
| 50 | 3.2.11.2 | Grabaciones propias |  | 2.85h | 2018-10-25 09:00 A | 2018-10-25 11:51 A |  | 100% |  | 2018-10-25 09:00 | 2018-10-25 11:51 | 2.85h |  |  |  | David Ramón Sevilla [15%]; Jose Ramon Barea Cecilia [15%]; Débora Galdeano González [15%]; María Sánchez Marqués [15%] | 1.71h | 1.71h | 46.2 | 46.2 | 46.2 |  |  |  |
| 51 | 3.2.11.3 | Sonidos externos |  | 2.85h | 2018-10-25 09:00 A | 2018-10-25 11:51 A |  | 100% |  | 2018-10-25 09:00 | 2018-10-25 11:51 | 2.85h |  |  |  | David Ramón Sevilla [15%]; Jose Ramon Barea Cecilia [15%]; Débora Galdeano González [15%]; María Sánchez Marqués [15%] | 1.71h | 1.71h | 46.2 | 46.2 | 46.2 |  |  |  |
| 52 | 3.2.11.4 | Música |  | 2.85h | 2018-10-25 09:00 A | 2018-10-25 11:51 A |  | 100% |  | 2018-10-25 09:00 | 2018-10-25 11:51 | 2.85h |  |  |  | David Ramón Sevilla [15%]; Jose Ramon Barea Cecilia [15%]; Débora Galdeano González [15%]; María Sánchez Marqués [15%] | 1.71h | 1.71h | 46.2 | 46.2 | 46.2 |  |  |  |
| 53 | 3.2.11.5 | Cue Sheet |  | 1.42h | 2018-10-25 09:00 A | 2018-10-25 10:25 A |  | 100% |  | 2018-10-25 09:00 | 2018-10-25 10:25 | 1.42h |  |  |  | David Ramón Sevilla [15%]; Jose Ramon Barea Cecilia [15%]; Débora Galdeano González [15%]; María Sánchez Marqués [15%] | 0.85h | 0.85h | 29.04 | 29.04 | 29.04 |  |  |  |
| 54 | 3.2.11.6 | Hoja de metadatos |  | 1.42h | 2018-10-25 09:00 A | 2018-10-25 10:25 A |  | 100% |  | 2018-10-25 09:00 | 2018-10-25 10:25 | 1.42h |  |  |  | David Ramón Sevilla [15%]; Jose Ramon Barea Cecilia [15%]; Débora Galdeano González [15%]; María Sánchez Marqués [15%] | 0.85h | 0.85h | 29.04 | 29.04 | 29.04 |  |  |  |
| 55 | 3.2.11.7 | Integración del motor de audio en el juego con prueba de concepto |  | 2.85h | 2018-10-25 09:00 A | 2018-10-25 11:51 A |  | 100% |  | 2018-10-25 09:00 | 2018-10-25 11:51 | 2.85h |  |  |  | David Ramón Sevilla [15%]; Jose Ramon Barea Cecilia [15%]; Débora Galdeano González [15%]; María Sánchez Marqués [15%] | 1.71h | 1.71h | 46.2 | 46.2 | 46.2 |  |  |  |
| 56 | 3.2.12 | [PM]Registrar tiempos y % de realización de tareas en Project |  | 48min | 2018-11-07 09:00 A | 2018-11-07 09:48 A |  | 100% |  | 2018-11-07 09:00 | 2018-11-07 09:48 | 48min |  | start no earlier than 2018-11-07 09:00 | 2018-11-07 19:00 | David Ramón Sevilla [2%]; Débora Galdeano González [2%]; Jose Ramon Barea Cecilia [2%]; Jose Vicente Anton Coy [2%]; María Sánchez Marqués [2%]; Marines Ánton Castelló [2%] | 0.1h | 0.1h | 4.18 | 4.18 | 4.18 | 48 m | Todos | 48 m |
| 57 | 3.2.13 | [PM]Rellenar documento Gestión de riesgos |  | 23.04h | 2018-11-02 09:00 A | 2018-11-06 18:02 A |  | 100% |  | 2018-11-02 09:00 | 2018-11-06 18:02 | 23.04h |  | start no earlier than 2018-11-02 09:00 | 2018-11-07 19:00 | David Ramón Sevilla [2%]; Débora Galdeano González [2%]; Jose Ramon Barea Cecilia [2%]; María Sánchez Marqués [2%]; Marines Ánton Castelló [2%]; Jose Vicente Anton Coy [2%] | 2.76h | 2.76h | 55.77 | 55.77 | 55.77 | 23 h | Maria, Debora, David | 9 h |

Notes:
- 31: Se mueven a iteraccion 4 por falta de tiempo. / Se mueve a la iteracion 5 por falta de tiempo.
- 32: Se mueven a iteraccion 4 por falta de tiempo. / Se mueve a la iteracion 5 por falta de tiempo.
- 33: Se pasa a la iteracion 5 por falta de tiempo.
- 37: bocetos
- 38: De diseño tenemos menos, empezamos a implementar
- 44: Se pasa a la iteracion 5 por falta de tiempo.
- 45: Se mueve a la iteracion 5 por problemas tecnicos de la persona a cargo.
- 46: Realizar enemigos. / Se pasa pequeña tarea de 4 horas a la iteracion 5.

| ID | WBS | Task | Duration | Start | Finish | Predecessors | Complete | Baseline start | Baseline finish | Baseline duration | Constraint | Resources | Work | Actual work | Cost | Baseline cost | Actual cost | Horas Estimadas | Encargados | Horas realizadas |
| --- | --- | --- | --- | --- | --- | --- | --- | --- | --- | --- | --- | --- | --- | --- | --- | --- | --- | --- | --- | --- |
| 58 | 3.3 | **Iteracion 5** | 10d | 2018-11-08 09:00 A | 2018-11-21 19:00 A |  | 100% | 2018-11-08 09:00 | 2018-11-21 19:00 | 10d | start no earlier than 2018-11-08 09:00 |  | 212.56h | 212.56h | 4,422.15 | 4,422.15 | 4,422.15 |  |  |  |
| 59 | 3.3.1 | [RV]Boceto de los personajes 3/3 | 4h | 2018-11-08 09:00 A | 2018-11-08 13:00 A |  | 100% | 2018-11-08 09:00 | 2018-11-08 13:00 | 4h |  | Débora Galdeano González [50%]; Marines Ánton Castelló [50%] | 4h | 4h | 100 | 100 | 100 | 4 h | Marines,Debora | 4,65 |
| 60 | 3.3.2 | [v1] Documento de diseño de toma de decision: espacio y metodos (2/2) | 28h | 2018-11-08 09:00 A | 2018-11-13 13:00 A |  | 100% | 2018-11-08 09:00 | 2018-11-13 13:00 | 28h |  | David Ramón Sevilla [50%]; Jose Vicente Anton Coy [50%] | 28h | 28h | 522 | 522 | 522 | 28 h | Jose vicente, David ramon | 10,7 |
| 61 | 3.3.3 | [V1]Documento de diseño técnico del motor de IA (2/2) | 29h | 2018-11-09 09:00 A | 2018-11-14 16:00 A |  | 100% | 2018-11-09 09:00 | 2018-11-14 16:00 | 29h | start no earlier than 2018-11-09 09:00 | Marines Ánton Castelló [80%] | 23.2h | 23.2h | 432 | 432 | 432 | 29 h | Marines | 12,85 |
| 62 | 3.3.4 | [V1]Sistema de toma de decisión con Behaviour Trees (3/2) (investigacion y diseño) | 36h | 2018-11-09 09:00 A | 2018-11-15 13:00 A |  | 100% | 2018-11-09 09:00 | 2018-11-15 13:00 | 36h | start no earlier than 2018-11-09 09:00 | Débora Galdeano González [80%] | 28.8h | 28.8h | 651.2 | 651.2 | 651.2 | 36 h | Debora | 53,2 |
| 63 | 3.3.5 | [v2]Utilización de joints en las mecánicas jugables (2/2) | 13h | 2018-11-09 09:00 A | 2018-11-12 16:00 A |  | 100% | 2018-11-09 09:00 | 2018-11-12 16:00 | 13h | start no earlier than 2018-11-09 09:00 | Jose Ramon Barea Cecilia [80%] | 10.4h | 10.4h | 224 | 224 | 224 | 17 h | Jose ramon | 26,86 |
| 64 | 3.3.6 | [V2]Mecánicas básicas entidades sin IA | 48h | 2018-11-08 09:00 A | 2018-11-15 19:00 A |  | 100% | 2018-11-08 09:00 | 2018-11-15 19:00 | 48h |  | María Sánchez Marqués [50%] | 24h | 24h | 490 | 490 | 490 | 30 h | Maria | 14,5 |
| 65 | 3.3.7 | [PM]Detallar plan iteraciones del mes de Noviembre. Creación Subtareas y precedencias en Project | 23.4h | 2018-11-08 09:00 A | 2018-11-12 18:24 A |  | 100% | 2018-11-08 09:00 | 2018-11-12 18:24 | 23.4h |  | Jose Vicente Anton Coy [2%]; David Ramón Sevilla [2%] | 0.94h | 0.94h | 17.57 | 17.57 | 17.57 | 23 h | Jose Vicente, David ramon | 0.5 |
| 66 | 3.3.8 | [PM]Detallar plan iteraciones del mes de Noviembre. Asignar recursos a las tareas en Project | 23h | 2018-11-12 18:24 A | 2018-11-15 17:24 A | 65 | 100% | 2018-11-12 18:24 | 2018-11-15 17:24 | 23h |  | David Ramón Sevilla [3%]; Jose Vicente Anton Coy [3%] | 1.38h | 1.38h | 25.92 | 25.92 | 25.92 | 23 h | Jose Vicente, David ramon |  |
| 67 | 3.3.9 | [PM]Aplicar el modelo EVA en Project | 21.6h | 2018-11-16 09:00 A | 2018-11-20 16:36 A |  | 100% | 2018-11-16 09:00 | 2018-11-20 16:36 | 21.6h | start no earlier than 2018-11-16 09:00 | David Ramón Sevilla [3%]; Jose Vicente Anton Coy [3%] | 1.3h | 1.3h | 24.41 | 24.41 | 24.41 | 21 h | Jose Vicente, David ramon |  |
| 68 | 3.3.10 | [RV]Bocetos de los elementos | 18h | 2018-11-16 09:00 A | 2018-11-20 11:00 A |  | 100% | 2018-11-16 09:00 | 2018-11-20 11:00 | 18h | start no earlier than 2018-11-16 09:00 | Débora Galdeano González [50%]; Marines Ánton Castelló [50%] | 18h | 18h | 380 | 380 | 380 | 18 h | Debora, marines | 0.9 |
| 69 | 3.3.11 | **[V2]Diseño e implementación b.objetos (3/10)** | 0.88d | 2018-11-15 09:00 A | 2018-11-15 18:00 A |  | 100% | 2018-11-15 09:00 | 2018-11-15 18:00 | 0.88d |  | Jose Vicente Anton Coy [10%]; David Ramón Sevilla [10%] | 1.4h | 1.4h | 28.8 | 28.8 | 28.8 | 7 h | Jose Vicente |  |
| 70 | 3.3.11.1 | Implementacion | 7h | 2018-11-15 09:00 A | 2018-11-15 18:00 A |  | 100% | 2018-11-15 09:00 | 2018-11-15 18:00 | 7h | start no earlier than 2018-11-15 09:00 |  |  |  |  |  |  | 7 h |  |  |
| 71 | 3.3.12 | [v2]Diseño e implementacion b.componentes 2 | 10h | 2018-11-15 09:00 A | 2018-11-16 11:00 A |  | 100% | 2018-11-15 09:00 | 2018-11-16 11:00 | 10h | start no earlier than 2018-11-15 09:00 | Jose Ramon Barea Cecilia [50%]; María Sánchez Marqués [50%] | 10h | 10h | 220 | 220 | 220 | 10 h | Maria | 10 |
| 72 | 3.3.13 | [v2]Formato propio para la definicion de los niveles(documentos con la especifiacion del formato) | 11h | 2018-11-13 09:00 A | 2018-11-14 12:00 A |  | 100% | 2018-11-13 09:00 | 2018-11-14 12:00 | 11h | start no earlier than 2018-11-13 09:00 | Jose Vicente Anton Coy [50%]; Jose Ramon Barea Cecilia [80%] | 14.3h | 14.3h | 300 | 300 | 300 | 11 h | Jose Vicente, Jose ramon | 5,2 |
| 73 | 3.3.14 | [V2]Creación de un cargador de niveles | 28h | 2018-11-14 12:00 A | 2018-11-19 18:00 A | 72 | 100% | 2018-11-14 12:00 | 2018-11-19 18:00 | 28h |  | Jose Ramon Barea Cecilia [50%]; Jose Vicente Anton Coy [50%] | 28h | 28h | 551 | 551 | 551 | 28 h | Jose Vicente, Jose Ramon | 12,6 |
| 74 | 3.3.15 | [v2]Implementacion de camara de seguimiento | 17h | 2018-11-16 09:00 A | 2018-11-20 10:00 A |  | 100% | 2018-11-16 09:00 | 2018-11-20 10:00 | 17h | start no earlier than 2018-11-16 09:00 | Marines Ánton Castelló [50%] | 8.5h | 8.5h | 162 | 162 | 162 | 17 h | Marines | 4,25 |
| 75 | 3.3.16 | **[TDS]Realizar sonidos para el juego 3/7** | 0.36d | 2018-11-08 09:00 A | 2018-11-08 11:51 A |  | 100% | 2018-11-08 09:00 | 2018-11-08 11:51 | 0.36d |  |  | 10.25h | 10.25h | 289.08 | 289.08 | 289.08 | 15 h | Debora, David, Jose ramon, Maria | 26.75 |
| 76 | 3.3.16.1 | Síntesis | 2.85h | 2018-11-08 09:00 A | 2018-11-08 11:51 A |  | 100% | 2018-11-08 09:00 | 2018-11-08 11:51 | 2.85h |  | David Ramón Sevilla [15%]; Jose Ramon Barea Cecilia [15%]; Débora Galdeano González [15%]; María Sánchez Marqués [15%] | 1.71h | 1.71h | 46.2 | 46.2 | 46.2 |  |  |  |
| 77 | 3.3.16.2 | Grabaciones propias | 2.85h | 2018-11-08 09:00 A | 2018-11-08 11:51 A |  | 100% | 2018-11-08 09:00 | 2018-11-08 11:51 | 2.85h |  | David Ramón Sevilla [15%]; Jose Ramon Barea Cecilia [15%]; Débora Galdeano González [15%]; María Sánchez Marqués [15%] | 1.71h | 1.71h | 46.2 | 46.2 | 46.2 |  |  |  |
| 78 | 3.3.16.3 | Sonidos externos | 2.85h | 2018-11-08 09:00 A | 2018-11-08 11:51 A |  | 100% | 2018-11-08 09:00 | 2018-11-08 11:51 | 2.85h |  | David Ramón Sevilla [15%]; Jose Ramon Barea Cecilia [15%]; Débora Galdeano González [15%]; María Sánchez Marqués [15%] | 1.71h | 1.71h | 46.2 | 46.2 | 46.2 |  |  |  |
| 79 | 3.3.16.4 | Música | 2.85h | 2018-11-08 09:00 A | 2018-11-08 11:51 A |  | 100% | 2018-11-08 09:00 | 2018-11-08 11:51 | 2.85h |  | David Ramón Sevilla [15%]; Jose Ramon Barea Cecilia [15%]; Débora Galdeano González [15%]; María Sánchez Marqués [15%] | 1.71h | 1.71h | 46.2 | 46.2 | 46.2 |  |  |  |
| 80 | 3.3.16.5 | Cue Sheet | 1.42h | 2018-11-08 09:00 A | 2018-11-08 10:25 A |  | 100% | 2018-11-08 09:00 | 2018-11-08 10:25 | 1.42h |  | David Ramón Sevilla [15%]; Jose Ramon Barea Cecilia [15%]; Débora Galdeano González [15%]; María Sánchez Marqués [15%] | 0.85h | 0.85h | 29.04 | 29.04 | 29.04 |  |  |  |
| 81 | 3.3.16.6 | Hoja de metadatos | 1.42h | 2018-11-08 09:00 A | 2018-11-08 10:25 A |  | 100% | 2018-11-08 09:00 | 2018-11-08 10:25 | 1.42h |  | David Ramón Sevilla [15%]; Jose Ramon Barea Cecilia [15%]; Débora Galdeano González [15%]; María Sánchez Marqués [15%] | 0.85h | 0.85h | 29.04 | 29.04 | 29.04 |  |  |  |
| 82 | 3.3.16.7 | Integración del motor de audio en el juego con prueba de concepto | 2.85h | 2018-11-08 09:00 A | 2018-11-08 11:51 A |  | 100% | 2018-11-08 09:00 | 2018-11-08 11:51 | 2.85h |  | David Ramón Sevilla [15%]; Jose Ramon Barea Cecilia [15%]; Débora Galdeano González [15%]; María Sánchez Marqués [15%] | 1.71h | 1.71h | 46.2 | 46.2 | 46.2 |  |  |  |
| 83 | 3.3.17 | [PM]Registrar tiempos y % de realización de tareas en Project | 48min | 2018-11-21 18:12 A | 2018-11-21 19:00 A |  | 100% | 2018-11-21 18:12 | 2018-11-21 19:00 | 48min | finish no earlier than 2018-11-21 19:00 | David Ramón Sevilla [2%]; Débora Galdeano González [2%]; Jose Ramon Barea Cecilia [2%]; Jose Vicente Anton Coy [2%]; María Sánchez Marqués [2%]; Marines Ánton Castelló [2%] | 0.1h | 0.1h | 4.18 | 4.18 | 4.18 | 48 minutos | Todos | 48 minutos |

Notes:
- 62: Se crea una tarea en la iteracion 6 para implementarlo
- 68: Se mueve a la iteraccion 5 por que faltan bocetos de personajes
- 83: Se han realizado en excel por comodidad, las proximas en toggl

| ID | WBS | Task | Duration | Start | Finish | Predecessors | Complete | Remaining | Baseline start | Baseline finish | Baseline duration | Total slack | Free slack | Constraint | Resources | Work | Actual work | Cost | Baseline cost | Actual cost | Horas Estimadas | Encargados | Horas realizadas |
| --- | --- | --- | --- | --- | --- | --- | --- | --- | --- | --- | --- | --- | --- | --- | --- | --- | --- | --- | --- | --- | --- | --- | --- |
| 84 | 3.4 | **Iteracion 6** | 10d | 2018-11-22 09:00 A | 2018-12-05 19:00 |  | 71% | 2.89d | 2018-11-22 09:00 | 2018-12-05 19:00 | 10d | 121.56d |  | start no earlier than 2018-11-22 09:00 |  | 184.34h | 151.59h | 3,771.06 | 3,771.06 | 3,128.81 |  |  |  |
| 85 | 3.4.1 | **[v1]Movimiento IA (PATHFINDING)** | 3.75d | 2018-11-22 09:00 A | 2018-11-27 17:00 A |  | 100% |  | 2018-11-22 09:00 | 2018-11-27 17:00 | 3.75d |  |  |  | Débora Galdeano González [50%]; Marines Ánton Castelló [50%] | 30h | 30h | 620 | 620 | 620 | 30 h | Marines, Debora | 31.5 |
| 86 | 3.4.1.1 | Investigacion | 10h | 2018-11-22 09:00 A | 2018-11-23 11:00 A |  | 100% |  | 2018-11-22 09:00 | 2018-11-23 11:00 | 10h |  |  |  |  |  |  |  |  |  | 10 h |  |  |
| 87 | 3.4.1.2 | Implementacion | 20h | 2018-11-23 11:00 A | 2018-11-27 17:00 A | 86 | 100% |  | 2018-11-23 11:00 | 2018-11-27 17:00 | 20h |  |  |  |  |  |  |  |  |  | 10 h |  |  |
| 88 | 3.4.2 | **[V1]Sistema de percepción sensorial (vista, oído, olfato, canales…)** | 5.75d | 2018-11-22 09:00 A | 2018-11-29 17:00 A |  | 100% |  | 2018-11-22 09:00 | 2018-11-29 17:00 | 5.75d |  |  |  | Jose Vicente Anton Coy [50%]; David Ramón Sevilla [50%] | 46h | 46h | 846 | 846 | 846 | 46 h | Jose vicente, David ramon | 30 |
| 89 | 3.4.2.1 | Investigacion | 16h | 2018-11-22 09:00 A | 2018-11-23 19:00 A |  | 100% |  | 2018-11-22 09:00 | 2018-11-23 19:00 | 16h |  |  | start no earlier than 2018-11-22 09:00 |  |  |  |  |  |  |  |  |  |
| 90 | 3.4.2.2 | Diseño | 6h | 2018-11-26 09:00 A | 2018-11-26 17:00 A | 89 | 100% |  | 2018-11-26 09:00 | 2018-11-26 17:00 | 6h |  |  |  |  |  |  |  |  |  |  |  |  |
| 91 | 3.4.2.3 | Implementar | 24h | 2018-11-26 17:00 A | 2018-11-29 17:00 A | 90 | 100% |  | 2018-11-26 17:00 | 2018-11-29 17:00 | 24h |  |  |  |  |  |  |  |  |  |  |  |  |
| 92 | 3.4.3 | [V1]Sistema de toma de decisión con Behaviour Trees (3/3) (Implementacion) | 20h | 2018-11-29 17:00 A | 2018-12-04 11:00 A | 85, 88 | 100% |  | 2018-11-29 17:00 | 2018-12-04 11:00 | 20h |  |  |  | Marines Ánton Castelló [50%]; Débora Galdeano González [50%] | 20h | 20h | 420 | 420 | 420 | 20 h | Marines, debora | 26.6 |
| 93 | 3.4.4 | [v2]Control del player: movimiento y colisiones sin motor de físicas | 40h | 2018-11-22 09:00 A | 2018-11-28 19:00 |  | 50% | 20h | 2018-11-22 09:00 | 2018-11-28 19:00 | 40h | 126.56d |  |  | María Sánchez Marqués [50%]; Jose Ramon Barea Cecilia [50%] | 40h | 20h | 820 | 820 | 420 | 40 h | Jose ramon, Maria | 47.55 |
| 94 | 3.4.5 | [V2]Utilización de propiedades físicas en las mecánicas jugables | 17h | 2018-11-29 09:00 A | 2018-12-03 10:00 |  | 25% | 12.75h | 2018-11-29 09:00 | 2018-12-03 10:00 | 17h | 124.44d |  | start no earlier than 2018-11-29 07:00 | Jose Ramon Barea Cecilia [50%]; Jose Vicente Anton Coy [50%] | 17h | 4.25h | 342 | 342 | 99.75 | 17 h | Jose ramon, Jose vicente |  |
| 95 | 3.4.6 | [RV]Bocetos del entorno | 18h | 2018-11-29 09:00 A | 2018-12-03 11:00 A |  | 100% |  | 2018-11-29 09:00 | 2018-12-03 11:00 | 18h |  |  | start no earlier than 2018-11-29 09:00 | Débora Galdeano González [50%]; María Sánchez Marqués [50%] | 18h | 18h | 399 | 399 | 399 | 18 h | Debora, Maria | 6.5 |
| 96 | 3.4.7 | **[TDS]Realizar sonidos para el juego 4/7** | 0.36d | 2018-11-22 09:00 A | 2018-11-22 11:51 A |  | 100% |  | 2018-11-22 09:00 | 2018-11-22 11:51 | 0.36d |  |  |  | David Ramón Sevilla [10%]; María Sánchez Marqués [10%]; Débora Galdeano González [10%]; Jose Ramon Barea Cecilia [10%] | 11.39h | 11.39h | 319.88 | 319.88 | 319.88 | 15 h | Maria, Debora, David, Jose ramon | 43.2 |
| 97 | 3.4.7.1 | Síntesis | 2.85h | 2018-11-22 09:00 A | 2018-11-22 11:51 A |  | 100% |  | 2018-11-22 09:00 | 2018-11-22 11:51 | 2.85h |  |  |  | David Ramón Sevilla [15%]; Jose Ramon Barea Cecilia [15%]; Débora Galdeano González [15%]; María Sánchez Marqués [15%] | 1.71h | 1.71h | 46.2 | 46.2 | 46.2 |  |  |  |
| 98 | 3.4.7.2 | Grabaciones propias | 2.85h | 2018-11-22 09:00 A | 2018-11-22 11:51 A |  | 100% |  | 2018-11-22 09:00 | 2018-11-22 11:51 | 2.85h |  |  |  | David Ramón Sevilla [15%]; Jose Ramon Barea Cecilia [15%]; Débora Galdeano González [15%]; María Sánchez Marqués [15%] | 1.71h | 1.71h | 46.2 | 46.2 | 46.2 |  |  |  |
| 99 | 3.4.7.3 | Sonidos externos | 2.85h | 2018-11-22 09:00 A | 2018-11-22 11:51 A |  | 100% |  | 2018-11-22 09:00 | 2018-11-22 11:51 | 2.85h |  |  |  | David Ramón Sevilla [15%]; Jose Ramon Barea Cecilia [15%]; Débora Galdeano González [15%]; María Sánchez Marqués [15%] | 1.71h | 1.71h | 46.2 | 46.2 | 46.2 |  |  |  |
| 100 | 3.4.7.4 | Música | 2.85h | 2018-11-22 09:00 A | 2018-11-22 11:51 A |  | 100% |  | 2018-11-22 09:00 | 2018-11-22 11:51 | 2.85h |  |  |  | David Ramón Sevilla [15%]; Jose Ramon Barea Cecilia [15%]; Débora Galdeano González [15%]; María Sánchez Marqués [15%] | 1.71h | 1.71h | 46.2 | 46.2 | 46.2 |  |  |  |
| 101 | 3.4.7.5 | Cue Sheet | 1.42h | 2018-11-22 09:00 A | 2018-11-22 10:25 A |  | 100% |  | 2018-11-22 09:00 | 2018-11-22 10:25 | 1.42h |  |  |  | David Ramón Sevilla [15%]; Jose Ramon Barea Cecilia [15%]; Débora Galdeano González [15%]; María Sánchez Marqués [15%] | 0.85h | 0.85h | 29.04 | 29.04 | 29.04 |  |  |  |
| 102 | 3.4.7.6 | Hoja de metadatos | 1.42h | 2018-11-22 09:00 A | 2018-11-22 10:25 A |  | 100% |  | 2018-11-22 09:00 | 2018-11-22 10:25 | 1.42h |  |  |  | David Ramón Sevilla [15%]; Jose Ramon Barea Cecilia [15%]; Débora Galdeano González [15%]; María Sánchez Marqués [15%] | 0.85h | 0.85h | 29.04 | 29.04 | 29.04 |  |  |  |
| 103 | 3.4.7.7 | Integración del motor de audio en el juego con prueba de concepto | 2.85h | 2018-11-22 09:00 A | 2018-11-22 11:51 A |  | 100% |  | 2018-11-22 09:00 | 2018-11-22 11:51 | 2.85h |  |  |  | David Ramón Sevilla [15%]; Jose Ramon Barea Cecilia [15%]; Débora Galdeano González [15%]; María Sánchez Marqués [15%] | 1.71h | 1.71h | 46.2 | 46.2 | 46.2 |  |  |  |
| 104 | 3.4.8 | [V1]Sistema de distribución central de tiempo de proceso (Scheduling) | 41h | 2018-11-27 12:00 A | 2018-12-04 13:00 |  | 25% | 30.75h | 2018-11-27 12:00 | 2018-12-04 13:00 | 41h | 118.06d | 6.5d | start no earlier than 2018-11-27 12:00 |  |  |  |  |  |  | 41 h | Jose vicente, David ramon | 2.5 |
| 105 | 3.4.9 | [V2]Diseño e implementación b.objetos (4/10) | 7h | 2018-11-22 09:00 A | 2018-11-22 18:00 A |  | 100% |  | 2018-11-22 09:00 | 2018-11-22 18:00 | 7h |  |  |  | Todos [5%] | 0.35h | 0.35h |  |  |  | 7 h | todos |  |
| 106 | 3.4.10 | [v2]Diseño e implementacion b.componentes 3 | 10h | 2018-11-22 09:00 A | 2018-11-23 11:00 A |  | 100% |  | 2018-11-22 09:00 | 2018-11-23 11:00 | 10h |  |  |  | Todos [5%] | 0.5h | 0.5h |  |  |  | 10 h | todos | 10 |
| 107 | 3.4.11 | [V2]Uso de trazado de rayos y otros tests de las físicas | 17h | 2018-11-30 15:00 | 2018-12-04 16:00 |  |  |  | 2018-11-30 15:00 | 2018-12-04 16:00 | 17h | 121.88d |  | start no earlier than 2018-11-30 13:00 |  |  |  |  |  |  | 17 h | jose ramon, maria |  |

| ID | WBS | Task | Type | Duration | Start | Finish | Predecessors | Complete | Remaining | Baseline start | Baseline finish | Baseline duration | Total slack | Free slack | Constraint | Resources | Work | Actual work | Cost | Baseline cost | Actual cost | Horas Estimadas | Encargados | Horas realizadas |
| --- | --- | --- | --- | --- | --- | --- | --- | --- | --- | --- | --- | --- | --- | --- | --- | --- | --- | --- | --- | --- | --- | --- | --- | --- |
| 108 | 3.4.12 | **[V2]Mecánicas de puzzles** |  | 4d | 2018-11-30 09:00 A | 2018-12-05 19:00 |  | 75% | 1d | 2018-11-30 09:00 | 2018-12-05 19:00 | 4d | 121.56d |  |  |  |  |  |  |  |  | 30 h | marines | 26.6 |
| 109 | 3.4.12.1 | Investigacion |  | 10h | 2018-11-30 09:00 A | 2018-12-03 11:00 A |  | 100% |  | 2018-11-30 09:00 | 2018-12-03 11:00 | 10h |  |  | start no earlier than 2018-11-29 23:00 |  |  |  |  |  |  | 10 h |  |  |
| 110 | 3.4.12.2 | Implementacion |  | 22h | 2018-12-03 11:00 A | 2018-12-05 19:00 | 109 | 64% | 8h | 2018-12-03 11:00 | 2018-12-05 19:00 | 22h | 121.56d |  |  |  |  |  |  |  |  | 22 h |  |  |
| 111 | 3.4.13 | [PM] Presentacion de Licencias de programas |  | 10h | 2018-11-22 09:00 A | 2018-11-23 11:00 A |  | 100% |  | 2018-11-22 09:00 | 2018-11-23 11:00 | 10h |  |  |  | Todos [10%] | 1h | 1h |  |  |  | 10 h | todos | 41.6 |
| 112 | 3.4.14 | [PM]Registrar tiempos y % de realización de tareas en Project |  | 48min | 2018-12-04 18:12 A | 2018-12-04 19:00 A |  | 100% |  | 2018-12-04 18:12 | 2018-12-04 19:00 | 48min |  |  | finish no earlier than 2018-12-04 19:00 | David Ramón Sevilla [2%]; Débora Galdeano González [2%]; Jose Ramon Barea Cecilia [2%]; Jose Vicente Anton Coy [2%]; María Sánchez Marqués [2%]; Marines Ánton Castelló [2%] | 0.1h | 0.1h | 4.18 | 4.18 | 4.18 | 48 h | todos | 30 m |
| 113 | 3.5 | **Iteracion 7** |  | 11d | 2018-12-07 09:00 A | 2018-12-21 19:00 |  | 61% | 4.24d | 2018-12-07 09:00 | 2018-12-21 19:00 | 11d | 109.56d |  |  |  | 126.71h | 45.31h | 2,679.63 | 2,679.63 | 1,090.83 |  |  |  |
| 114 | 3.5.1 | [PM]Detallar plan iteraciones del mes de Diciembre. Creación Subtareas y precedencias en Project |  | 23.04h | 2018-12-07 09:00 A | 2018-12-11 18:02 |  |  | 23.04h | 2018-12-07 09:00 | 2018-12-11 18:02 | 23.04h | 117.68d |  | start no earlier than 2018-12-07 09:00 | David Ramón Sevilla [10%]; Jose Ramon Barea Cecilia [5%]; Jose Vicente Anton Coy [10%] |  |  | 4.6 | 4.6 | 2.8 | 23 h | David , Jose vicente | 3 h |
| 115 | 3.5.2 | [PM]Detallar plan iteraciones del mes de Diciembre. Asignar recursos a las tareas en Project |  | 23.04h | 2018-12-11 18:02 A | 2018-12-14 17:04 A | 114 | 100% |  | 2018-12-11 18:02 | 2018-12-14 17:04 | 23.04h |  |  | start no earlier than 2018-12-07 09:00 | David Ramón Sevilla [5%]; Jose Vicente Anton Coy [5%] |  |  | 0.9 | 0.9 | 0.9 | 23 h | David , Jose vicente | 3 h |
| 116 | 3.5.3 | [v2]Control de player colisiones |  | 10h | 2018-12-07 09:00 A | 2018-12-10 11:00 A |  | 100% |  | 2018-12-07 09:00 | 2018-12-10 11:00 | 10h |  |  | start no earlier than 2018-12-07 09:00 | Jose Ramon Barea Cecilia [50%]; María Sánchez Marqués [50%] | 10h | 10h | 220 | 220 | 220 | 10 h | Jose ramon | 18 h |
| 117 | 3.5.4 | [v1] percepcion visual |  | 10h | 2018-12-07 09:00 A | 2018-12-10 11:00 A |  | 100% |  | 2018-12-07 09:00 | 2018-12-10 11:00 | 10h |  |  | start no earlier than 2018-12-07 09:00 | Jose Vicente Anton Coy [50%] | 5h | 5h | 99 | 99 | 99 | 10 h | jose vicente | 8.6 h |
| 118 | 3.5.5 | [v2]Mecanicas de puzzle 2/2 |  | 5h | 2018-12-07 09:00 A | 2018-12-07 16:00 A |  | 100% |  | 2018-12-07 09:00 | 2018-12-07 16:00 | 5h |  |  | start no earlier than 2018-12-07 09:00 | Marines Ánton Castelló [50%] | 2.5h | 2.5h | 54 | 54 | 54 | 5 h | marines | 48.5 h |
| 119 | 3.5.6 | [v2]Mecanicas de Accion |  | 32h | 2018-12-10 09:00 A | 2018-12-13 19:00 A |  | 100% |  | 2018-12-10 09:00 | 2018-12-13 19:00 | 32h |  |  | start no earlier than 2018-12-10 09:00 | Débora Galdeano González [40%]; David Ramón Sevilla [40%]; Jose Ramon Barea Cecilia [40%] |  |  | 15.2 | 15.2 | 15.2 | 32 h | Debora, David, Jose ramon | 81 h |
| 120 | 3.5.7 | [V2]Mecánicas de rol |  | 30h | 2018-12-10 09:00 A | 2018-12-13 17:00 A |  | 100% |  | 2018-12-10 09:00 | 2018-12-13 17:00 | 30h |  |  | start no earlier than 2018-12-10 09:00 | María Sánchez Marqués [40%]; Marines Ánton Castelló [40%]; Jose Vicente Anton Coy [40%] |  |  | 14.4 | 14.4 | 14.4 | 30 h | Maria, Marines, Jose vicente | 34.5 |
| 121 | 3.5.8 | **[TDS]Realizar sonidos para el juego 5/7** |  | 0.36d | 2018-12-07 09:00 A | 2018-12-07 11:51 A |  | 100% |  | 2018-12-07 09:00 | 2018-12-07 11:51 | 0.36d |  |  | start no earlier than 2018-12-07 09:00 | Débora Galdeano González [8%]; David Ramón Sevilla [8%]; María Sánchez Marqués [8%]; Jose Ramon Barea Cecilia [8%] | 10.71h | 10.71h | 304.63 | 304.63 | 304.63 | 15 h | Debora, David, Maria, Jose ramon | 21.6 h |
| 122 | 3.5.8.1 | Síntesis |  | 2.85h | 2018-12-07 09:00 A | 2018-12-07 11:51 A |  | 100% |  | 2018-12-07 09:00 | 2018-12-07 11:51 | 2.85h |  |  |  | David Ramón Sevilla [15%]; Jose Ramon Barea Cecilia [15%]; Débora Galdeano González [15%]; María Sánchez Marqués [15%] | 1.71h | 1.71h | 46.2 | 46.2 | 46.2 |  |  |  |
| 123 | 3.5.8.2 | Grabaciones propias |  | 2.85h | 2018-12-07 09:00 A | 2018-12-07 11:51 A |  | 100% |  | 2018-12-07 09:00 | 2018-12-07 11:51 | 2.85h |  |  |  | David Ramón Sevilla [15%]; Jose Ramon Barea Cecilia [15%]; Débora Galdeano González [15%]; María Sánchez Marqués [15%] | 1.71h | 1.71h | 46.2 | 46.2 | 46.2 |  |  |  |
| 124 | 3.5.8.3 | Sonidos externos |  | 2.85h | 2018-12-07 09:00 A | 2018-12-07 11:51 A |  | 100% |  | 2018-12-07 09:00 | 2018-12-07 11:51 | 2.85h |  |  |  | David Ramón Sevilla [15%]; Jose Ramon Barea Cecilia [15%]; Débora Galdeano González [15%]; María Sánchez Marqués [15%] | 1.71h | 1.71h | 46.2 | 46.2 | 46.2 |  |  |  |
| 125 | 3.5.8.4 | Música |  | 2.85h | 2018-12-07 09:00 A | 2018-12-07 11:51 A |  | 100% |  | 2018-12-07 09:00 | 2018-12-07 11:51 | 2.85h |  |  |  | David Ramón Sevilla [15%]; Jose Ramon Barea Cecilia [15%]; Débora Galdeano González [15%]; María Sánchez Marqués [15%] | 1.71h | 1.71h | 46.2 | 46.2 | 46.2 |  |  |  |
| 126 | 3.5.8.5 | Cue Sheet |  | 1.42h | 2018-12-07 09:00 A | 2018-12-07 10:25 A |  | 100% |  | 2018-12-07 09:00 | 2018-12-07 10:25 | 1.42h |  |  |  | David Ramón Sevilla [15%]; Jose Ramon Barea Cecilia [15%]; Débora Galdeano González [15%]; María Sánchez Marqués [15%] | 0.85h | 0.85h | 29.04 | 29.04 | 29.04 |  |  |  |
| 127 | 3.5.8.6 | Hoja de metadatos |  | 1.42h | 2018-12-07 09:00 A | 2018-12-07 10:25 A |  | 100% |  | 2018-12-07 09:00 | 2018-12-07 10:25 | 1.42h |  |  |  | David Ramón Sevilla [15%]; Jose Ramon Barea Cecilia [15%]; Débora Galdeano González [15%]; María Sánchez Marqués [15%] | 0.85h | 0.85h | 29.04 | 29.04 | 29.04 |  |  |  |
| 128 | 3.5.8.7 | Integración del motor de audio en el juego con prueba de concepto |  | 2.85h | 2018-12-07 09:00 A | 2018-12-07 11:51 A |  | 100% |  | 2018-12-07 09:00 | 2018-12-07 11:51 | 2.85h |  |  |  | David Ramón Sevilla [15%]; Jose Ramon Barea Cecilia [15%]; Débora Galdeano González [15%]; María Sánchez Marqués [15%] | 1.71h | 1.71h | 46.2 | 46.2 | 46.2 |  |  |  |
| 129 | 3.5.9 | [V2]Diseño e implementación b.objetos (5/10) |  | 7h | 2018-12-07 09:00 A | 2018-12-07 18:00 A |  | 100% |  | 2018-12-07 09:00 | 2018-12-07 18:00 | 7h |  |  | start no earlier than 2018-12-07 09:00 | Jose Ramon Barea Cecilia [5%]; Jose Vicente Anton Coy [5%]; David Ramón Sevilla [5%]; María Sánchez Marqués [5%]; Marines Ánton Castelló [5%]; Débora Galdeano González [5%] |  |  | 4.8 | 4.8 | 4.8 | 7 h | Todos | 7h |
| 130 | 3.5.10 | [v2]Diseño e implementacion b.componentes 5 |  | 10h | 2018-12-07 09:00 A | 2018-12-10 11:00 A |  | 100% |  | 2018-12-07 09:00 | 2018-12-10 11:00 | 10h |  |  | start no earlier than 2018-12-07 09:00 | Jose Ramon Barea Cecilia [8%]; Jose Vicente Anton Coy [8%]; David Ramón Sevilla [8%]; María Sánchez Marqués [8%]; Marines Ánton Castelló [8%]; Débora Galdeano González [8%] |  |  | 7.68 | 7.68 | 7.68 | 10 h | Todos | 10 h |
| 131 | 3.5.11 | [v2]Uso de sistema de depuración visual de las físicas |  | 10h | 2018-12-11 09:00 | 2018-12-12 11:00 |  |  |  | 2018-12-11 09:00 | 2018-12-12 11:00 | 10h | 116.25d |  | start no earlier than 2018-12-11 09:00 | David Ramón Sevilla [40%]; Jose Vicente Anton Coy [40%] | 8h |  | 158.4 | 158.4 |  | 10 h | Jose Vicente, David ramon |  |
| 132 | 3.5.12 | [v1]Gestión de recursos de IA con Level-of-Detail (LoD) |  | 40h | 2018-12-13 09:00 | 2018-12-19 19:00 | 104 |  |  | 2018-12-13 09:00 | 2018-12-19 19:00 | 40h | 110.5d |  | start no earlier than 2018-12-13 09:00 | David Ramón Sevilla [40%]; Marines Ánton Castelló [40%] | 32h |  | 590.4 | 590.4 |  | 40 h | David ramon, Marines |  |
| 133 | 3.5.13 | [v2]Power-ups y elementos adicionales |  | 28h | 2018-12-13 09:00 | 2018-12-18 13:00 |  |  |  | 2018-12-13 09:00 | 2018-12-18 13:00 | 28h | 112d |  | start no earlier than 2018-12-13 09:00 | Débora Galdeano González [40%]; María Sánchez Marqués [40%] | 22.4h |  | 487.2 | 487.2 |  | 28 h | Debora, Maria |  |
| 134 | 3.5.14 | [V1]Sistema de distribución central de tiempo de proceso (Scheduling) |  | 38h | 2018-12-17 09:00 | 2018-12-21 17:00 |  |  |  | 2018-12-17 09:00 | 2018-12-21 17:00 | 38h | 108.75d |  | start no earlier than 2018-12-15 09:00 | David Ramón Sevilla [50%] | 19h |  | 351 | 351 |  | 38 h | david ramon | 4 h |
| 135 | 3.5.15 | [V2]Uso de trazado de rayos y otros tests de las físicas |  | 17h | 2018-12-17 09:00 A | 2018-12-19 10:00 A |  | 100% |  | 2018-12-17 09:00 | 2018-12-19 10:00 | 17h |  |  | start no earlier than 2018-12-17 09:00 | Jose Ramon Barea Cecilia [50%]; María Sánchez Marqués [50%] | 17h | 17h | 360 | 360 | 360 | 17 h | jose ramon | 10 h |
| 136 | 3.5.16 | [PD]Cartel juego/proyecto |  | 60h | 2018-12-10 09:00 A | 2018-12-19 13:00 A |  | 100% |  | 2018-12-10 09:00 | 2018-12-19 13:00 | 60h |  |  | start no earlier than 2018-12-10 09:00 | Jose Ramon Barea Cecilia [6%]; Marines Ánton Castelló [6%]; Jose Vicente Anton Coy [6%]; David Ramón Sevilla [6%] |  |  | 3.24 | 3.24 | 3.24 | 60 h | Jose ramon, marines, jose vicente, david | 8 h |
| 137 | 3.5.17 | [PM]Registrar tiempos y % de realización de tareas en Project |  | 48min | 2018-12-21 18:12 A | 2018-12-21 19:00 A |  | 100% |  | 2018-12-21 18:12 | 2018-12-21 19:00 | 48min |  |  | finish no earlier than 2018-12-21 19:00 | David Ramón Sevilla [2%]; Débora Galdeano González [2%]; Jose Ramon Barea Cecilia [2%]; Jose Vicente Anton Coy [2%]; María Sánchez Marqués [2%]; Marines Ánton Castelló [2%] | 0.1h | 0.1h | 4.18 | 4.18 | 4.18 | 48 h | todos | 30 m |
| 138 | 3.6 | [PM]Comparar la planificación prevista y real en Project hito 1 |  | 21.6h | 2018-10-01 09:00 | 2018-10-03 16:36 |  |  |  | 2018-10-01 09:00 | 2018-10-03 16:36 | 21.6h | 159.5d | 0d |  |  |  |  |  |  |  |  |  |  |
| 139 | 3.7 | [PM]Confeccionar Informes de iteración e informe resumen de Hito 1 |  | 21.6h | 2018-10-03 16:36 | 2018-10-08 12:12 | 138 |  |  | 2018-10-03 16:36 | 2018-10-08 12:12 | 21.6h | 159.5d | 0d |  |  |  |  |  |  |  |  |  |  |
| 140 | 3.8 | [PM]Elaborar la presentación del Hito 1 |  | 14.4h | 2018-10-08 12:12 | 2018-10-10 10:36 | 139 |  |  | 2018-10-08 12:12 | 2018-10-10 10:36 | 14.4h | 159.5d | 0d |  |  |  |  |  |  |  |  |  |  |
| 141 | 3.9 | [PM]Exponer la presentación del Hito 1 |  | 14.4h | 2018-10-10 10:36 | 2018-10-11 19:00 | 140 |  |  | 2018-10-10 10:36 | 2018-10-11 19:00 | 14.4h | 159.5d |  |  |  |  |  |  |  |  |  |  |  |
| 142 | 4 | Versión Alpha de mecánicas | milestone | 0d | 2018-12-22 09:00 | 2018-12-22 09:00 | 11 |  |  | 2018-12-22 09:00 | 2018-12-22 09:00 | 0d | 109.56d |  | start no earlier than 2018-12-22 09:00 |  |  |  |  |  |  |  |  |  |

Notes:
- 112: Se han realizado en excel por comodidad, las proximas en toggl
- 137: Se han realizado en excel por comodidad, las proximas en toggl

| ID | WBS | Task | Duration | Start | Finish | Predecessors | Complete | Remaining | Baseline start | Baseline finish | Baseline duration | Total slack | Free slack | Constraint | Deadline | Resources | Work | Actual work | Cost | Baseline cost | Actual cost | Horas Estimadas | Encargados | Horas realizadas |
| --- | --- | --- | --- | --- | --- | --- | --- | --- | --- | --- | --- | --- | --- | --- | --- | --- | --- | --- | --- | --- | --- | --- | --- | --- |
| 143 | 5 | **Hito 2** | 25d | 2018-12-24 09:00 A | 2019-01-25 19:00 |  | 70% | 7.39d | 2018-12-24 09:00 | 2019-01-25 19:00 | 25d | 0d |  |  | 2019-01-25 19:00 |  | 378.06h | 305.66h | 7,812.48 | 7,812.48 | 6,375.65 |  |  |  |
| 144 | 5.1 | **Navidad** | 10d | 2018-12-24 09:00 A | 2019-01-06 19:00 |  | 61% | 3.9d | 2018-12-24 09:00 | 2019-01-06 19:00 | 10d | 15d |  | start no earlier than 2018-12-22 09:00 |  |  | 129.97h | 82.37h | 2,651.82 | 2,651.82 | 1,752.22 |  |  |  |
| 145 | 5.1.1 | [PM]Detallar plan iteraciones del mes de Enero. Creación Subtareas y precedencias en Project | 46h | 2018-12-24 09:00 A | 2018-12-31 17:00 |  | 50% | 23h | 2018-12-24 09:00 | 2018-12-31 17:00 | 46h | 19.25d |  |  |  | Jose Vicente Anton Coy [5%]; María Sánchez Marqués [5%]; Jose Ramon Barea Cecilia [5%] | 6.9h | 3.45h | 136.3 | 136.3 | 69.6 | 23 h | Maria, Jose vicente, Jose ramon |  |
| 146 | 5.1.2 | [PM]Detallar plan iteraciones del mes de Enero. Asignar recursos a las tareas en Project | 46h | 2018-12-28 09:00 A | 2019-01-04 17:00 |  | 50% | 23h | 2018-12-28 09:00 | 2019-01-04 17:00 | 46h | 15.25d |  | start no earlier than 2018-12-28 09:00 |  | Jose Ramon Barea Cecilia [5%]; Jose Vicente Anton Coy [5%]; María Sánchez Marqués [5%] | 6.9h | 3.45h | 136.3 | 136.3 | 69.6 | 23 h | Maria, Jose vicente, Jose ramon |  |
| 147 | 5.1.3 | [V2]Implementación del HUD | 24h | 2018-12-24 09:00 A | 2018-12-26 19:00 A |  | 100% |  | 2018-12-24 09:00 | 2018-12-26 19:00 | 24h |  |  |  |  | Jose Vicente Anton Coy [40%]; María Sánchez Marqués [40%] | 19.2h | 19.2h | 380 | 380 | 380 |  | Jose Vicente, Maria |  |
| 148 | 5.1.4 | [v1]Gestión de recursos de IA con Level-of-Detail (LoD) | 40h | 2018-12-28 09:00 A | 2019-01-03 19:00 |  | 50% | 20h | 2018-12-28 09:00 | 2019-01-03 19:00 | 40h | 16d |  | start no earlier than 2018-12-28 09:00 |  | David Ramón Sevilla [40%]; Marines Ánton Castelló [40%] | 32h | 16h | 590.4 | 590.4 | 302.4 | 40 h | David ramon, Marines |  |
| 149 | 5.1.5 | [v2]Power-ups y elementos adicionales | 28h | 2018-12-31 09:00 A | 2019-01-03 13:00 |  | 50% | 14h | 2018-12-31 09:00 | 2019-01-03 13:00 | 28h | 16.5d |  | start no earlier than 2018-12-31 09:00 |  | Débora Galdeano González [40%]; María Sánchez Marqués [40%] | 22.4h | 11.2h | 487.2 | 487.2 | 252 | 28 h | Debora, Maria |  |
| 150 | 5.1.6 | [V1]Sistema de distribución central de tiempo de proceso (Scheduling) | 38h | 2018-12-31 09:00 A | 2019-01-04 17:00 |  | 50% | 19h | 2018-12-31 09:00 | 2019-01-04 17:00 | 38h | 15.25d |  | start no earlier than 2018-12-31 09:00 |  | David Ramón Sevilla [50%] | 19h | 9.5h | 351 | 351 | 180 | 38 h | david ramon |  |
| 151 | 5.1.7 | [V2]Diseño e implementación b.objetos (6/10) | 7h | 2018-12-24 09:00 A | 2018-12-24 18:00 A |  | 100% |  | 2018-12-24 09:00 | 2018-12-24 18:00 | 7h |  |  |  |  | Jose Ramon Barea Cecilia [4%]; Jose Vicente Anton Coy [4%]; David Ramón Sevilla [4%]; María Sánchez Marqués [4%]; Marines Ánton Castelló [4%]; Débora Galdeano González [4%] | 1.68h | 1.68h | 37.12 | 37.12 | 37.12 | 7 h | todos |  |
| 152 | 5.1.8 | [v2]Diseño e implementacion b.componentes 6 | 10h | 2018-12-24 09:00 A | 2018-12-25 11:00 A |  | 100% |  | 2018-12-24 09:00 | 2018-12-25 11:00 | 10h |  |  |  |  | David Ramón Sevilla [4%]; Débora Galdeano González [4%]; Jose Ramon Barea Cecilia [4%]; Jose Vicente Anton Coy [4%]; María Sánchez Marqués [4%]; Marines Ánton Castelló [4%] | 2.4h | 2.4h | 51.04 | 51.04 | 51.04 | 10 h | todos |  |
| 153 | 5.1.9 | [v2]Uso de sistema de depuración visual de las físicas | 10h | 2018-12-24 09:00 A | 2018-12-25 11:00 |  | 50% | 5h | 2018-12-24 09:00 | 2018-12-25 11:00 | 10h | 23.75d |  |  |  | David Ramón Sevilla [40%]; Jose Vicente Anton Coy [40%] | 8h | 4h | 158.4 | 158.4 | 86.4 | 10 h | Jose Vicente, David ramon |  |
| 154 | 5.1.10 | **[TDS]Realizar sonidos para el juego 6/7** | 0.36d | 2018-12-24 09:00 A | 2018-12-24 11:51 A |  | 100% |  | 2018-12-24 09:00 | 2018-12-24 11:51 | 0.36d |  |  |  |  | Débora Galdeano González [10%]; María Sánchez Marqués [10%]; Jose Ramon Barea Cecilia [10%]; David Ramón Sevilla [10%] | 11.39h | 11.39h | 319.88 | 319.88 | 319.88 | 15 h | Debora, Maria, Jose ramon, David ramon |  |
| 155 | 5.1.10.1 | Síntesis | 2.85h | 2018-12-24 09:00 A | 2018-12-24 11:51 A |  | 100% |  | 2018-12-24 09:00 | 2018-12-24 11:51 | 2.85h |  |  |  |  | David Ramón Sevilla [15%]; Jose Ramon Barea Cecilia [15%]; Débora Galdeano González [15%]; María Sánchez Marqués [15%] | 1.71h | 1.71h | 46.2 | 46.2 | 46.2 |  |  |  |
| 156 | 5.1.10.2 | Grabaciones propias | 2.85h | 2018-12-24 09:00 A | 2018-12-24 11:51 A |  | 100% |  | 2018-12-24 09:00 | 2018-12-24 11:51 | 2.85h |  |  |  |  | David Ramón Sevilla [15%]; Jose Ramon Barea Cecilia [15%]; Débora Galdeano González [15%]; María Sánchez Marqués [15%] | 1.71h | 1.71h | 46.2 | 46.2 | 46.2 |  |  |  |
| 157 | 5.1.10.3 | Sonidos externos | 2.85h | 2018-12-24 09:00 A | 2018-12-24 11:51 A |  | 100% |  | 2018-12-24 09:00 | 2018-12-24 11:51 | 2.85h |  |  |  |  | David Ramón Sevilla [15%]; Jose Ramon Barea Cecilia [15%]; Débora Galdeano González [15%]; María Sánchez Marqués [15%] | 1.71h | 1.71h | 46.2 | 46.2 | 46.2 |  |  |  |
| 158 | 5.1.10.4 | Música | 2.85h | 2018-12-24 09:00 A | 2018-12-24 11:51 A |  | 100% |  | 2018-12-24 09:00 | 2018-12-24 11:51 | 2.85h |  |  |  |  | David Ramón Sevilla [15%]; Jose Ramon Barea Cecilia [15%]; Débora Galdeano González [15%]; María Sánchez Marqués [15%] | 1.71h | 1.71h | 46.2 | 46.2 | 46.2 |  |  |  |
| 159 | 5.1.10.5 | Cue Sheet | 1.42h | 2018-12-24 09:00 A | 2018-12-24 10:25 A |  | 100% |  | 2018-12-24 09:00 | 2018-12-24 10:25 | 1.42h |  |  |  |  | David Ramón Sevilla [15%]; Jose Ramon Barea Cecilia [15%]; Débora Galdeano González [15%]; María Sánchez Marqués [15%] | 0.85h | 0.85h | 29.04 | 29.04 | 29.04 |  |  |  |
| 160 | 5.1.10.6 | Hoja de metadatos | 1.42h | 2018-12-24 09:00 A | 2018-12-24 10:25 A |  | 100% |  | 2018-12-24 09:00 | 2018-12-24 10:25 | 1.42h |  |  |  |  | David Ramón Sevilla [15%]; Jose Ramon Barea Cecilia [15%]; Débora Galdeano González [15%]; María Sánchez Marqués [15%] | 0.85h | 0.85h | 29.04 | 29.04 | 29.04 |  |  |  |
| 161 | 5.1.10.7 | Integración del motor de audio en el juego con prueba de concepto | 2.85h | 2018-12-24 09:00 A | 2018-12-24 11:51 A |  | 100% |  | 2018-12-24 09:00 | 2018-12-24 11:51 | 2.85h |  |  |  |  | David Ramón Sevilla [15%]; Jose Ramon Barea Cecilia [15%]; Débora Galdeano González [15%]; María Sánchez Marqués [15%] | 1.71h | 1.71h | 46.2 | 46.2 | 46.2 |  |  |  |
| 162 | 5.1.11 | [PM]Registrar tiempos y % de realización de tareas en Project | 48min | 2019-01-04 18:12 A | 2019-01-06 19:00 A | 148 | 100% |  | 2019-01-04 18:12 | 2019-01-06 19:00 | 48min |  |  | finish no earlier than 2019-01-06 19:00 |  | David Ramón Sevilla [2%]; Débora Galdeano González [2%]; Jose Ramon Barea Cecilia [2%]; Jose Vicente Anton Coy [2%]; María Sánchez Marqués [2%]; Marines Ánton Castelló [2%] | 0.1h | 0.1h | 4.18 | 4.18 | 4.18 | 48 h | todos |  |
| 163 | 5.2 | **Iteracion 8** | 15d | 2019-01-07 09:00 A | 2019-01-25 19:00 |  | 76% | 3.65d | 2019-01-07 09:00 | 2019-01-25 19:00 | 15d | 0d |  | start no earlier than 2019-01-07 09:00 |  |  | 246.39h | 221.94h | 5,119.67 | 5,119.67 | 4,589.44 |  |  |  |
| 164 | 5.2.1 | [PM]Detallar plan iteraciones del mes de Enero. Asignar recursos a las tareas en Project | 9.6h | 2019-01-14 09:00 A | 2019-01-15 10:36 |  | 63% | 3.6h | 2019-01-14 09:00 | 2019-01-15 10:36 | 9.6h | 8.8d |  | start no earlier than 2019-01-14 09:00 |  | Jose Ramon Barea Cecilia [20%] | 1.92h | 1.2h | 42.4 | 42.4 | 28 | 9,6 h |  | 6h |
| 165 | 5.2.2 | [PM]Detallar plan iteraciones del mes de Enero. Creación Subtareas y precedencias en Project | 9.6h | 2019-01-14 09:00 A | 2019-01-15 10:36 |  | 63% | 3.6h | 2019-01-14 09:00 | 2019-01-15 10:36 | 9.6h | 8.8d |  | start no earlier than 2019-01-14 09:00 |  | Jose Ramon Barea Cecilia [20%] | 1.92h | 1.2h | 42.4 | 42.4 | 28 | 9,6 h |  | 6h |
| 166 | 5.2.3 | [PM]Revisar especificación proyecto | 19h | 2019-01-14 09:00 A | 2019-01-16 12:00 |  | 68% | 6h | 2019-01-14 09:00 | 2019-01-16 12:00 | 19h | 7.62d |  | start no earlier than 2019-01-14 09:00 |  | María Sánchez Marqués [8.6%] | 1.63h | 1.11h | 34.29 | 34.29 | 24 | 28 |  | 13 h |
| 167 | 5.2.4 | [PM]Reestimar proyecto | 19h | 2019-01-14 09:00 A | 2019-01-16 12:00 |  | 47% | 10h | 2019-01-14 09:00 | 2019-01-16 12:00 | 19h | 7.62d |  | start no earlier than 2019-01-14 09:00 |  | María Sánchez Marqués [8.6%] | 1.63h | 0.77h | 34.29 | 34.29 | 17.14 | 28 h |  | 9 h |
| 168 | 5.2.5 | [PM]Registrar tiempos y % de realización de tareas en Project | 48min | 2019-01-14 09:00 A | 2019-01-14 09:48 A |  | 100% |  | 2019-01-14 09:00 | 2019-01-14 09:48 | 48min |  |  | start no earlier than 2019-01-14 09:00 |  | David Ramón Sevilla [4%]; Débora Galdeano González [4%]; Jose Ramon Barea Cecilia [4%]; Jose Vicente Anton Coy [4%]; María Sánchez Marqués [4%]; Marines Ánton Castelló [4%] | 0.19h | 0.19h | 8.35 | 8.35 | 8.35 | 6 h | todos | 30 m |
| 169 | 5.2.6 | [general] Mejoras y optimizacion del codigo | 82h | 2019-01-07 09:00 A | 2019-01-21 11:00 A |  | 100% |  | 2019-01-07 09:00 | 2019-01-21 11:00 | 82h |  |  |  |  | Jose Ramon Barea Cecilia [1%]; Jose Vicente Anton Coy [8%]; María Sánchez Marqués [2%]; Marines Ánton Castelló [18%]; David Ramón Sevilla [13%]; Débora Galdeano González [61%] | 82h | 82h | 1,669.24 | 1,669.24 | 1,669.24 |  |  |  |
| 170 | 5.2.7 | [V2]Diseño e implementación b.objetos (7/10) | 7h | 2019-01-14 09:00 A | 2019-01-14 18:00 A |  | 100% |  | 2019-01-14 09:00 | 2019-01-14 18:00 | 7h |  |  | start no earlier than 2019-01-14 09:00 |  | David Ramón Sevilla [16%]; María Sánchez Marqués [2%]; Marines Ánton Castelló [20%]; Jose Ramon Barea Cecilia [1%]; Jose Vicente Anton Coy [10%]; Débora Galdeano González [51%] | 7h | 7h | 160.8 | 160.8 | 160.8 |  | Todos |  |
| 171 | 5.2.8 | [v2]Diseño e implementacion b.componentes 7 | 10h | 2019-01-14 09:00 A | 2019-01-15 11:00 A |  | 100% |  | 2019-01-14 09:00 | 2019-01-15 11:00 | 10h |  |  | start no earlier than 2019-01-14 09:00 |  | Jose Ramon Barea Cecilia [1%]; David Ramón Sevilla [16%]; Jose Vicente Anton Coy [11%]; María Sánchez Marqués [2%]; Marines Ánton Castelló [21%]; Débora Galdeano González [57%] | 10.8h | 10.8h | 239.59 | 239.59 | 239.59 |  | Todos |  |
| 172 | 5.2.9 | [V1]Sistema de logros y puntuaciones web | 40h | 2019-01-14 09:00 A | 2019-01-18 19:00 A |  | 100% |  | 2019-01-14 09:00 | 2019-01-18 19:00 | 40h |  |  | start no earlier than 2019-01-14 09:00 |  | Jose Vicente Anton Coy [20%] | 8h | 8h | 147.6 | 147.6 | 147.6 | 40 h |  | 54 h |
| 173 | 5.2.10 | [V2]Integración de librería para GUI | 6h | 2019-01-14 09:00 A | 2019-01-14 17:00 A |  | 100% |  | 2019-01-14 09:00 | 2019-01-14 17:00 | 6h |  |  | start no earlier than 2019-01-14 09:00 |  | Jose Vicente Anton Coy [5%] | 0.3h | 0.3h | 6.3 | 6.3 | 6.3 | 6 h | Marines, Debora | 12 h |
| 174 | 5.2.11 | [RV]Modelado de los personajes | 60h | 2019-01-14 09:00 A | 2019-01-23 13:00 |  | 10% | 54h | 2019-01-14 09:00 | 2019-01-23 13:00 | 60h | 0.12d | 0d | start no earlier than 2019-01-14 09:00 |  | Débora Galdeano González [30%] | 18h | 1.8h | 402.6 | 402.6 | 46.2 | 60 h | Maria, Jose ramon | 6 h |
| 175 | 5.2.12 | [v2]Power-ups y elementos adicionales | 30h | 2019-01-07 09:00 A | 2019-01-10 17:00 |  | 56% | 13.2h | 2019-01-07 09:00 | 2019-01-10 17:00 | 30h | 11.25d |  |  |  | Débora Galdeano González [20%] | 6h | 3.36h | 136.4 | 136.4 | 78.32 |  |  |  |
| 176 | 5.2.13 | [RV]Texturizado de los personajes | 20h | 2019-01-23 15:00 A | 2019-01-25 19:00 | 174 | 5% | 19h | 2019-01-23 15:00 | 2019-01-25 19:00 | 20h | 0d |  | start no earlier than 2019-01-21 09:00 |  | Débora Galdeano González [10%] | 2h | 0.1h | 46.2 | 46.2 | 4.4 | 40 h | Debora |  |

Notes:
- 145: El plan de iteracion se realizo al final de la iteracion 7 realmente por el project manager anterior, ahora la pongo como 50% completada y el resto es el otro 50% de la iteracion 8
- 162: Se han realizado en excel por comodidad, las proximas en toggl
- 168: Se han realizado en excel por comodidad, las proximas en toggl

| ID | WBS | Task | Type | Duration | Start | Finish | Predecessors | Complete | Remaining | Baseline start | Baseline finish | Baseline duration | Total slack | Free slack | Constraint | Resources | Work | Actual work | Cost | Baseline cost | Actual cost | Encargados | Horas Estimadas | Horas realizadas |
| --- | --- | --- | --- | --- | --- | --- | --- | --- | --- | --- | --- | --- | --- | --- | --- | --- | --- | --- | --- | --- | --- | --- | --- | --- |
| 177 | 5.2.14 | **[TDS]Realizar sonidos para el juego 7/7** |  | 0.36d | 2019-01-07 09:00 A | 2019-01-07 11:51 A |  | 100% |  | 2019-01-07 09:00 | 2019-01-07 11:51 | 0.36d |  |  |  | David Ramón Sevilla [7%]; Jose Ramon Barea Cecilia [30%]; María Sánchez Marqués [8%] | 11.54h | 11.54h | 323.19 | 323.19 | 323.19 | Maria, Debora, Jose ramon, David ramon |  |  |
| 178 | 5.2.14.1 | Síntesis |  | 2.85h | 2019-01-07 09:00 A | 2019-01-07 11:51 A |  | 100% |  | 2019-01-07 09:00 | 2019-01-07 11:51 | 2.85h |  |  |  | David Ramón Sevilla [15%]; Jose Ramon Barea Cecilia [15%]; Débora Galdeano González [15%]; María Sánchez Marqués [15%] | 1.71h | 1.71h | 46.2 | 46.2 | 46.2 |  |  |  |
| 179 | 5.2.14.2 | Grabaciones propias |  | 2.85h | 2019-01-07 09:00 A | 2019-01-07 11:51 A |  | 100% |  | 2019-01-07 09:00 | 2019-01-07 11:51 | 2.85h |  |  |  | David Ramón Sevilla [15%]; Jose Ramon Barea Cecilia [15%]; Débora Galdeano González [15%]; María Sánchez Marqués [15%] | 1.71h | 1.71h | 46.2 | 46.2 | 46.2 |  |  |  |
| 180 | 5.2.14.3 | Sonidos externos |  | 2.85h | 2019-01-07 09:00 A | 2019-01-07 11:51 A |  | 100% |  | 2019-01-07 09:00 | 2019-01-07 11:51 | 2.85h |  |  |  | David Ramón Sevilla [15%]; Jose Ramon Barea Cecilia [15%]; Débora Galdeano González [15%]; María Sánchez Marqués [15%] | 1.71h | 1.71h | 46.2 | 46.2 | 46.2 |  |  |  |
| 181 | 5.2.14.4 | Música |  | 2.85h | 2019-01-07 09:00 A | 2019-01-07 11:51 A |  | 100% |  | 2019-01-07 09:00 | 2019-01-07 11:51 | 2.85h |  |  |  | David Ramón Sevilla [15%]; Jose Ramon Barea Cecilia [15%]; Débora Galdeano González [15%]; María Sánchez Marqués [15%] | 1.71h | 1.71h | 46.2 | 46.2 | 46.2 |  |  |  |
| 182 | 5.2.14.5 | Cue Sheet |  | 1.42h | 2019-01-07 09:00 A | 2019-01-07 10:25 A |  | 100% |  | 2019-01-07 09:00 | 2019-01-07 10:25 | 1.42h |  |  |  | David Ramón Sevilla [15%]; Jose Ramon Barea Cecilia [15%]; Débora Galdeano González [15%]; María Sánchez Marqués [15%] | 0.85h | 0.85h | 29.04 | 29.04 | 29.04 |  |  |  |
| 183 | 5.2.14.6 | Hoja de metadatos |  | 1.42h | 2019-01-07 09:00 A | 2019-01-07 10:25 A |  | 100% |  | 2019-01-07 09:00 | 2019-01-07 10:25 | 1.42h |  |  |  | David Ramón Sevilla [15%]; Jose Ramon Barea Cecilia [15%]; Débora Galdeano González [15%]; María Sánchez Marqués [15%] | 0.85h | 0.85h | 29.04 | 29.04 | 29.04 |  |  |  |
| 184 | 5.2.14.7 | Integración del motor de audio en el juego con prueba de concepto |  | 2.85h | 2019-01-07 09:00 A | 2019-01-07 11:51 A |  | 100% |  | 2019-01-07 09:00 | 2019-01-07 11:51 | 2.85h |  |  |  | David Ramón Sevilla [15%]; Jose Ramon Barea Cecilia [15%]; Débora Galdeano González [15%]; María Sánchez Marqués [15%] | 1.71h | 1.71h | 46.2 | 46.2 | 46.2 |  |  |  |
| 185 | 5.2.15 | [v2]Uso de sistema de depuración visual de las físicas |  | 10h | 2019-01-14 09:00 A | 2019-01-15 11:00 A |  | 100% |  | 2019-01-14 09:00 | 2019-01-15 11:00 | 10h |  |  |  | Débora Galdeano González [10%] | 1h | 1h | 24.2 | 24.2 | 24.2 |  |  |  |
| 186 | 5.2.16 | [TDS]Realizar sonidos para el juego 8/7 |  | 51h | 2019-01-17 09:00 A | 2019-01-25 12:00 |  | 96% | 2h | 2019-01-17 09:00 | 2019-01-25 12:00 | 51h | 0.62d |  | start no earlier than 2019-01-17 09:00 | David Ramón Sevilla [7%]; María Sánchez Marqués [8%]; Jose Ramon Barea Cecilia [30%] | 48.25h | 47.35h | 968.56 | 968.56 | 950.84 |  | 15 h | 46 h |
| 187 | 5.2.17 | [v2]Retocar mecanicas de Accion |  | 20h | 2019-01-07 09:00 A | 2019-01-09 13:00 A |  | 100% |  | 2019-01-07 09:00 | 2019-01-09 13:00 | 20h |  |  |  | María Sánchez Marqués [20%] | 4h | 4h | 84 | 84 | 84 |  |  |  |
| 188 | 5.2.18 | [v2]Retocar Control del player: movimiento y colisiones sin motor de fisicas |  | 4h | 2019-01-08 09:00 A | 2019-01-08 13:00 A |  | 100% |  | 2019-01-08 09:00 | 2019-01-08 13:00 | 4h |  |  |  | Jose Ramon Barea Cecilia [20%] | 0.8h | 0.8h | 20 | 20 | 20 |  |  |  |
| 189 | 5.2.19 | [v2]Retocar mecanicas de puzzle 3/2 |  | 4.15h | 2019-01-08 09:00 A | 2019-01-08 15:09 A |  | 100% |  | 2019-01-08 09:00 | 2019-01-08 15:09 | 4.15h |  |  |  | Marines Ánton Castelló [10%] | 0.41h | 0.41h | 9.27 | 9.27 | 9.27 |  |  |  |
| 190 | 5.2.20 | [TAG] Aprendizaje OpenGL |  | 39h | 2019-01-14 09:00 A | 2019-01-18 18:00 A |  | 100% |  | 2019-01-14 09:00 | 2019-01-18 18:00 | 39h |  |  |  | David Ramón Sevilla | 39h | 39h | 720 | 720 | 720 |  |  |  |
| 191 | 5.3 | [PM]Comparar la planificación prevista y real en Project hito 2 |  | 4h | 2019-01-22 09:00 A | 2019-01-22 13:00 |  | 75% | 1h | 2019-01-22 09:00 | 2019-01-22 13:00 | 4h | 3.5d |  | start no earlier than 2019-01-22 09:00 | Jose Ramon Barea Cecilia [20%] | 0.8h | 0.6h | 20 | 20 | 16 |  |  |  |
| 192 | 5.4 | [PM]Confeccionar Informes de iteración e informe resumen de Hito 2 |  | 6h | 2019-01-22 09:00 A | 2019-01-22 17:00 |  | 83% | 1h | 2019-01-22 09:00 | 2019-01-22 17:00 | 6h | 3.25d |  | start no earlier than 2019-01-22 09:00 | Jose Ramon Barea Cecilia; María Sánchez Marqués [15%] | 0.9h | 0.75h | 21 | 21 | 18 |  | 6 h | 17 h |
| 193 | 6 | Version Beta del juego, que se pueda jugar | milestone | 0d | 2019-01-25 19:00 | 2019-01-25 19:00 | 143 |  |  | 2019-01-25 19:00 | 2019-01-25 19:00 | 0d | 83.5d |  | start no earlier than 2018-12-22 09:00 |  |  |  |  |  |  |  |  |  |
| 194 | 7 | **Hito 3** |  | 45.38d | 2019-01-25 09:00 A | 2019-03-28 12:00 |  | 75% | 11.53d | 2019-01-25 09:00 | 2019-03-28 12:00 | 45.38d | 40.19d | 0d |  |  | 375.11h | 283.33h | 7,746.99 | 7,746.99 | 5,947.35 |  |  |  |
| 195 | 7.1 | **Iteracion 9** |  | 15d | 2019-01-25 09:00 A | 2019-02-14 19:00 |  | 44% | 8.4d | 2019-01-25 09:00 | 2019-02-14 19:00 | 15d | 70.56d |  | start no earlier than 2019-01-25 09:00 |  | 114.84h | 45.75h | 2,239.08 | 2,239.08 | 923.37 |  |  |  |
| 196 | 7.1.1 | [PM]Detallar plan iteraciones del mes de Febrero-Marzo. Creación Subtareas y precedencias en Project |  | 9.6h | 2019-01-25 09:00 A | 2019-01-28 10:36 A |  | 100% |  | 2019-01-25 09:00 | 2019-01-28 10:36 | 9.6h |  |  |  | Jose Ramon Barea Cecilia [20%] | 1.92h | 1.92h | 42.4 | 42.4 | 42.4 |  | 9,6 h | 2 h |
| 197 | 7.1.2 | [PM]Detallar plan iteraciones del mes de Febrero-Marzo Asignar recursos a las tareas en Project |  | 9.6d | 2019-01-25 09:00 A | 2019-02-07 15:48 A |  | 100% |  | 2019-01-25 09:00 | 2019-02-07 15:48 | 9.6d |  |  |  | Jose Ramon Barea Cecilia [20%] | 15.36h | 15.36h | 311.2 | 311.2 | 311.2 |  | 9,6 h | 2 h |
| 198 | 7.1.3 | [PM]Registrar tiempos y % de realización de tareas en Project |  | 48min | 2019-01-25 09:00 A | 2019-01-25 09:48 A |  | 100% |  | 2019-01-25 09:00 | 2019-01-25 09:48 | 48min |  |  |  | Todos [4%] | 0.03h | 0.03h |  |  |  |  | 6 h | 48 min |
| 199 | 7.1.4 | [general] Mejoras y optimizacion del codigo |  | 10h | 2019-01-28 09:00 A | 2019-01-29 11:00 A |  | 100% |  | 2019-01-28 09:00 | 2019-01-29 11:00 | 10h |  |  | start no earlier than 2019-01-28 09:00 | David Ramón Sevilla [4%]; Débora Galdeano González [4%]; Jose Ramon Barea Cecilia [4%]; Jose Vicente Anton Coy [4%]; María Sánchez Marqués [4%]; Marines Ánton Castelló [4%] | 2.4h | 2.4h | 51.04 | 51.04 | 51.04 |  | 10 h | 37 h |
| 200 | 7.1.5 | [V2]Diseño e implementación b.objetos (8/10) |  | 7h | 2019-01-25 09:00 A | 2019-01-25 18:00 A |  | 100% |  | 2019-01-25 09:00 | 2019-01-25 18:00 | 7h |  |  |  | Todos [4%] | 0.28h | 0.28h |  |  |  |  | 7 h | 4 h |
| 201 | 7.1.6 | [v2]Diseño e implementacion b.componentes 8 |  | 10h | 2019-01-25 09:00 A | 2019-01-28 11:00 A |  | 100% |  | 2019-01-25 09:00 | 2019-01-28 11:00 | 10h |  |  | start no earlier than 2019-01-07 09:00 | Todos [4%] | 0.4h | 0.4h |  |  |  |  | 10 h | 13 h |
| 202 | 7.1.7 | [V1]Sistema de depuración visual in-game de la IA |  | 50h | 2019-01-25 09:00 | 2019-02-04 11:00 |  |  |  | 2019-01-25 09:00 | 2019-02-04 11:00 | 50h | 78.25d |  | start no earlier than 2019-01-17 09:00 | David Ramón Sevilla [4%]; Jose Vicente Anton Coy [4%]; Marines Ánton Castelló [4%]; Débora Galdeano González [4%] | 8h |  | 155.04 | 155.04 |  | Todos | 6 h | 0h |
| 203 | 7.1.8 | [TDS]Resto de la biblioteca (máx. 1/3), cuesheet y metadatos finales |  | 4h | 2019-01-25 09:00 A | 2019-01-25 13:00 A |  | 100% |  | 2019-01-25 09:00 | 2019-01-25 13:00 | 4h |  |  |  | David Ramón Sevilla [10%] | 2h | 2h | 37.8 | 37.8 | 37.8 |  | 4 h | 5 h |
| 204 | 7.1.9 | [TAG]Aprendizaje OpenGL |  | 30h | 2019-01-28 09:00 A | 2019-01-31 17:00 |  | 75% | 7.5h | 2019-01-28 09:00 | 2019-01-31 17:00 | 30h | 80.81d |  | start no earlier than 2019-01-28 09:00 | Jose Vicente Anton Coy [20%]; Jose Ramon Barea Cecilia [10%] | 9h | 6.75h | 173.6 | 173.6 | 131.6 |  | 10 h | 22,1 h |
| 205 | 7.1.10 | [PD]Making of juego/proyecto |  | 40h | 2019-01-25 09:00 | 2019-01-31 19:00 |  |  |  | 2019-01-25 09:00 | 2019-01-31 19:00 | 40h | 79.5d |  |  | David Ramón Sevilla [20%]; Marines Ánton Castelló [10%]; María Sánchez Marqués [10%] | 16h |  | 303.4 | 303.4 |  |  | 4 h | 0h |
| 206 | 7.1.11 | [V1]Sistema de depuración visual in-game de la IA |  | 50h | 2019-01-28 09:00 | 2019-02-05 11:00 |  |  |  | 2019-01-28 09:00 | 2019-02-05 11:00 | 50h | 77.25d |  | start no earlier than 2019-01-28 09:00 | Marines Ánton Castelló [10%]; Jose Vicente Anton Coy [10%]; David Ramón Sevilla [10%] | 15h |  | 275.4 | 275.4 |  |  | 6 h | 0h |
| 207 | 7.1.12 | [RV]Modelado de los personajes |  | 120h | 2019-01-25 09:00 A | 2019-02-14 19:00 |  | 25% | 90h | 2019-01-25 09:00 | 2019-02-14 19:00 | 120h | 70.56d |  |  | Débora Galdeano González [10%]; María Sánchez Marqués [10%]; Marines Ánton Castelló [10%] | 31.5h | 9h | 627 | 627 | 186 |  | 32 h | 31 h |
| 208 | 7.1.13 | [v2]Power-ups y elementos adicionales |  | 28h | 2019-01-28 09:00 A | 2019-01-31 13:00 |  | 75% | 7h | 2019-01-28 09:00 | 2019-01-31 13:00 | 28h | 81.06d |  | start no earlier than 2019-01-28 09:00 | Débora Galdeano González [10%]; David Ramón Sevilla [10%] | 5.6h | 4.2h | 116 | 116 | 88 |  | 5 h | 18 h |
| 209 | 7.1.14 | [V2]Implementación de menús |  | 35h | 2019-01-25 09:00 A | 2019-01-31 12:00 |  | 25% | 26.25h | 2019-01-25 09:00 | 2019-01-31 12:00 | 35h | 81.19d |  | start no earlier than 2019-01-14 09:00 | Jose Vicente Anton Coy [5%]; David Ramón Sevilla [10%] | 5.25h | 1.31h | 97.2 | 97.2 | 26.32 | Jose ramon | 7 h | 11 h |
| 210 | 7.1.15 | [PM]Comparar la planificación prevista y real en Project hito 3 |  | 6h | 2019-02-04 09:00 A | 2019-02-04 17:00 A |  | 100% |  | 2019-02-04 09:00 | 2019-02-04 17:00 | 6h |  |  | start no earlier than 2019-02-04 09:00 | Jose Ramon Barea Cecilia [20%] | 1.2h | 1.2h | 28 | 28 | 28 |  | 6 h | 3 h |
| 211 | 7.1.16 | [PM]Confeccionar Informes de iteración e informe resumen de Hito 3 |  | 6h | 2019-02-04 09:00 A | 2019-02-04 17:00 A |  | 100% |  | 2019-02-04 09:00 | 2019-02-04 17:00 | 6h |  |  | start no earlier than 2019-02-04 09:00 | María Sánchez Marqués [10%]; Jose Ramon Barea Cecilia [5%] | 0.9h | 0.9h | 21 | 21 | 21 |  | 6 h | 6 h |

Notes:
- 190: El tiempo ocupado en esta tarea se puede repartir posteriormente en el hito 3 entre las tareas de estructura basica de TAG
- 202: crear nueva tarea
- 209: Crear nueva tarea

| ID | WBS | Task | Duration | Start | Finish | Predecessors | Complete | Remaining | Baseline start | Baseline finish | Baseline duration | Total slack | Constraint | Resources | Work | Actual work | Cost | Baseline cost | Actual cost | Horas Estimadas | Horas realizadas |
| --- | --- | --- | --- | --- | --- | --- | --- | --- | --- | --- | --- | --- | --- | --- | --- | --- | --- | --- | --- | --- | --- |
| 212 | 7.2 | **Iteracion 10** | 8.19d | 2019-02-07 09:00 A | 2019-02-19 10:30 |  | 91% | 0.76d | 2019-02-07 09:00 | 2019-02-19 10:30 | 8.19d | 68.38d | start no earlier than 2019-02-06 09:00 |  | 57.48h | 48.88h | 1,318.5 | 1,318.5 | 1,130.9 |  |  |
| 213 | 7.2.1 | [PM]Detallar plan de iteracion 10. Creación Subtareas y precedencias en Project | 2.4h | 2019-02-07 09:00 A | 2019-02-07 11:24 A |  | 100% |  | 2019-02-07 09:00 | 2019-02-07 11:24 | 2.4h |  | start no earlier than 2019-02-07 09:00 | Jose Ramon Barea Cecilia [10%] | 0.24h | 0.24h | 6.8 | 6.8 | 6.8 | 2,4 h | 2,65 h |
| 214 | 7.2.2 | [PM]Detallar plan de iteracion 10 Asignar recursos a las tareas en Project + Sesion Scrum | 3.4h | 2019-02-07 09:00 A | 2019-02-07 12:24 A |  | 100% |  | 2019-02-07 09:00 | 2019-02-07 12:24 | 3.4h |  | start no earlier than 2019-02-07 09:00 | Jose Ramon Barea Cecilia [10%]; David Ramón Sevilla [10%]; Débora Galdeano González [10%]; Jose Vicente Anton Coy [10%]; María Sánchez Marqués [10%]; Marines Ánton Castelló [10%] | 0.34h | 0.34h | 18.4 | 18.4 | 18.4 | 3,4 h | 3 h |
| 215 | 7.2.3 | [PM]Registrar tiempos y % de realización de tareas en Project | 48min | 2019-02-07 09:00 A | 2019-02-07 09:48 A |  | 100% |  | 2019-02-07 09:00 | 2019-02-07 09:48 | 48min |  | start no earlier than 2019-02-07 09:00 | Todos | 0.8h | 0.8h |  |  |  | 48 mins | 48 mins |
| 216 | 7.2.4 | [general] Mejoras estructura del codigo | 2h | 2019-02-08 09:00 A | 2019-02-08 11:00 A |  | 100% |  | 2019-02-08 09:00 | 2019-02-08 11:00 | 2h |  | start no earlier than 2019-02-08 09:00 | Marines Ánton Castelló [20%]; Débora Galdeano González [20%] | 0.8h | 0.8h | 24 | 24 | 24 | 2 h | 72,5h |
| 217 | 7.2.5 | [RV]Modelado de los personajes (2/4) | 30h | 2019-02-08 09:00 A | 2019-02-13 17:00 A |  | 100% |  | 2019-02-08 09:00 | 2019-02-13 17:00 | 30h |  | start no earlier than 2019-02-08 09:00 | María Sánchez Marqués; Débora Galdeano González [20%] | 21h | 21h | 444.4 | 444.4 | 444.4 | 30 h | 42,26 h |
| 218 | 7.2.6 | [RV]Modelado del entorno y elementos | 10h | 2019-02-08 09:00 A | 2019-02-11 11:00 A |  | 100% |  | 2019-02-08 09:00 | 2019-02-11 11:00 | 10h |  | start no earlier than 2019-02-08 09:00 | Jose Ramon Barea Cecilia [10%] | 1h | 1h | 22 | 22 | 22 | 10 h | 27 h |
| 219 | 7.2.7 | [V2]Diseño e implementación b.objetos (9/10) | 7h | 2019-02-12 09:00 A | 2019-02-12 18:00 A |  | 100% |  | 2019-02-12 09:00 | 2019-02-12 18:00 | 7h |  | start no earlier than 2019-02-12 09:00 | Marines Ánton Castelló [10%] | 0.7h | 0.7h | 14.4 | 14.4 | 14.4 | 7 h | 7,33 h |
| 220 | 7.2.8 | [v2]Diseño e implementacion b.componentes 9 | 10h | 2019-02-12 09:00 A | 2019-02-13 11:00 A |  | 100% |  | 2019-02-12 09:00 | 2019-02-13 11:00 | 10h |  | start no earlier than 2019-02-12 09:00 | Débora Galdeano González [10%]; Jose Ramon Barea Cecilia [10%]; Marines Ánton Castelló [10%] | 3h | 3h | 66 | 66 | 66 | 10 h | 10 h |
| 221 | 7.2.9 | [V1]Sistema de depuración visual in-game de la IA | 12h | 2019-02-08 09:00 A | 2019-02-11 13:00 A |  | 100% |  | 2019-02-08 09:00 | 2019-02-11 13:00 | 12h |  | start no earlier than 2019-02-08 09:00 | Débora Galdeano González | 4.8h | 4.8h | 127.6 | 127.6 | 127.6 | 12 h | 12 h |
| 222 | 7.2.10 | [v1]Sistema de control de movimiento con Steering Behaviours | 7h | 2019-02-13 09:00 A | 2019-02-13 18:00 A |  | 100% |  | 2019-02-13 09:00 | 2019-02-13 18:00 | 7h |  | start no earlier than 2019-02-13 09:00 | Débora Galdeano González [20%]; Marines Ánton Castelló [20%] | 2.8h | 2.8h | 64 | 64 | 64 | 7h | 32,5 h |
| 223 | 7.2.11 | [v2]Power-ups y elementos adicionales | 7h | 2019-02-13 09:00 A | 2019-02-13 18:00 |  | 50% | 3.5h | 2019-02-13 09:00 | 2019-02-13 18:00 | 7h | 71.69d | start no earlier than 2019-02-13 09:00 | David Ramón Sevilla | 4.2h | 2.1h | 93.6 | 93.6 | 55.8 | 7 h | 2 h |
| 224 | 7.2.12 | [v1]Gestión de recursos de IA con Level-of-Detail (LoD) | 10h | 2019-02-08 09:00 A | 2019-02-11 11:00 |  | 70% | 3h | 2019-02-08 09:00 | 2019-02-11 11:00 | 10h | 74.31d | start no earlier than 2019-02-08 09:00 | Débora Galdeano González | 6h | 1.4h | 154 | 154 | 52.8 | 10h | 7 h |
| 225 | 7.2.13 | [v2]Implementación de un sistema multi-cámara | 2h | 2019-02-15 09:00 | 2019-02-15 11:00 |  |  |  | 2019-02-15 09:00 | 2019-02-15 11:00 | 2h | 69.25d | start no earlier than 2019-02-15 09:00 | Débora Galdeano González [10%]; Jose Ramon Barea Cecilia [10%] | 0.4h |  | 12.6 | 12.6 |  |  |  |
| 226 | 7.2.14 | [v2]Uso de sistema de depuración visual de las físicas | 5h | 2019-02-18 09:00 | 2019-02-18 16:00 |  |  |  | 2019-02-18 09:00 | 2019-02-18 16:00 | 5h | 67.88d | start no earlier than 2019-02-16 09:00 | Débora Galdeano González [10%]; Jose Ramon Barea Cecilia [10%]; Jose Vicente Anton Coy [10%] | 1.5h |  | 36 | 36 |  |  |  |
| 227 | 7.2.15 | [TAG]Estructura básica del nodo | 7h | 2019-02-08 09:00 A | 2019-02-08 18:00 A |  | 100% |  | 2019-02-08 09:00 | 2019-02-08 18:00 | 7h |  | start no earlier than 2019-02-08 09:00 | Jose Vicente Anton Coy | 2.8h | 2.8h | 68.4 | 68.4 | 68.4 | 7 h | 18 h |
| 228 | 7.2.16 | [TAG ]Recorrido dibujado del arbol | 7h | 2019-02-18 09:00 A | 2019-02-18 18:00 A |  | 100% |  | 2019-02-18 09:00 | 2019-02-18 18:00 | 7h |  | start no earlier than 2019-02-16 09:00 | Jose Vicente Anton Coy | 2.8h | 2.8h | 68.4 | 68.4 | 68.4 | 7 h | 17 h |
| 229 | 7.2.17 | [TAG]Estructura básica de la entidad (Constructor, destructor, funciones… todas virtuales, vacías) | 7h | 2019-02-18 09:00 A | 2019-02-18 18:00 A |  | 100% |  | 2019-02-18 09:00 | 2019-02-18 18:00 | 7h |  | start no earlier than 2019-02-16 09:00 | David Ramón Sevilla [10%] | 0.7h | 0.7h | 14.4 | 14.4 | 14.4 | 7 h | 10,33 h |
| 230 | 7.2.18 | [TAG]Matrices (model, view, projection) y pila estáticas y su manejo | 4h | 2019-02-18 09:00 A | 2019-02-18 13:00 A |  | 100% |  | 2019-02-18 09:00 | 2019-02-18 13:00 | 4h |  | start no earlier than 2019-02-17 09:00 | David Ramón Sevilla [10%] | 1.6h | 1.6h | 30.6 | 30.6 | 30.6 | 4 h | 13,13 h |
| 231 | 7.2.19 | [TAG]Estructura básica de la transformación (Constructor, destructor, matriz transformación…) | 4.5h | 2019-02-18 09:00 A | 2019-02-18 15:30 A |  | 100% |  | 2019-02-18 09:00 | 2019-02-18 15:30 | 4.5h |  | start no earlier than 2019-02-16 09:00 | David Ramón Sevilla [10%] | 0.45h | 0.45h | 9.9 | 9.9 | 9.9 | 4,5 h | 5,28 h |
| 232 | 7.2.20 | [TDS]Resto de la biblioteca (máx. 1/3), cuesheet y metadatos finales | 4h | 2019-02-08 09:00 A | 2019-02-08 13:00 A |  | 100% |  | 2019-02-08 09:00 | 2019-02-08 13:00 | 4h |  | start no earlier than 2019-02-08 09:00 | David Ramón Sevilla [20%] | 0.8h | 0.8h | 18 | 18 | 18 | 4 h | 7,21 h |
| 233 | 7.2.21 | [PM]Comparar la planificación prevista y real en Project hito 3 | 1.5h | 2019-02-19 09:00 A | 2019-02-19 10:30 A |  | 100% |  | 2019-02-19 09:00 | 2019-02-19 10:30 | 1.5h |  | start no earlier than 2019-02-19 09:00 | Jose Ramon Barea Cecilia [20%] | 0.3h | 0.3h | 10 | 10 | 10 | 1,5 h | 1,5 h |
| 234 | 7.2.22 | [PM]Confeccionar Informes de iteración e informe resumen de Hito 3 | 1.5h | 2019-02-19 09:00 A | 2019-02-19 10:30 A |  | 100% |  | 2019-02-19 09:00 | 2019-02-19 10:30 | 1.5h |  | start no earlier than 2019-02-19 09:00 | María Sánchez Marqués [20%]; Jose Ramon Barea Cecilia [10%] | 0.45h | 0.45h | 15 | 15 | 15 | 1,5 h | 3,75 h |
| 235 | 7.3 | **Iteracion 11** | 12.56d | 2019-02-20 09:00 A | 2019-03-07 15:30 |  | 92% | 1.04d | 2019-02-20 09:00 | 2019-03-07 15:30 | 12.56d | 55d | start no earlier than 2019-02-20 09:00 |  | 51.89h | 46.25h | 1,123.37 | 1,123.37 | 994.99 |  |  |
| 236 | 7.3.1 | [PM]Detallar plan de iteracion 11. Creación Subtareas y precedencias en Project | 2.6h | 2019-02-21 09:00 A | 2019-02-21 11:36 A |  | 100% |  | 2019-02-21 09:00 | 2019-02-21 11:36 | 2.6h |  | start no earlier than 2019-02-21 09:00 | Jose Ramon Barea Cecilia [10%] | 0.26h | 0.26h | 7.2 | 7.2 | 7.2 | 2,4 h | 2,6 h |
| 237 | 7.3.2 | [PM]Detallar plan de iteracion 11 Asignar recursos a las tareas en Project | 3.4h | 2019-02-21 09:00 A | 2019-02-21 12:24 A |  | 100% |  | 2019-02-21 09:00 | 2019-02-21 12:24 | 3.4h |  | start no earlier than 2019-02-21 09:00 | Jose Ramon Barea Cecilia [10%] | 0.34h | 0.34h | 8.8 | 8.8 | 8.8 | 3,4 h | 3,4 h |
| 238 | 7.3.3 | [PM]Registrar tiempos y % de realización de tareas en Project | 48min | 2019-02-21 09:00 A | 2019-02-21 09:48 A |  | 100% |  | 2019-02-21 09:00 | 2019-02-21 09:48 | 48min |  | start no earlier than 2019-02-21 09:00 | Todos [4%] | 0.03h | 0.03h |  |  |  | 48 mins | 48 mins |
| 239 | 7.3.4 | [v2]Diseño e implementación b.objetos (final) | 3.6h | 2019-02-21 09:00 A | 2019-02-21 12:36 A |  | 100% |  | 2019-02-21 09:00 | 2019-02-21 12:36 | 3.6h |  | start no earlier than 2019-02-21 09:00 | Marines Ánton Castelló | 0.58h | 0.58h | 28.37 | 28.37 | 28.37 | 7 h | 3,6 h |
| 240 | 7.3.5 | [v2]Diseño e implementacion b.componentes (final) | 6h | 2019-02-21 09:00 A | 2019-02-21 17:00 A |  | 100% |  | 2019-02-21 09:00 | 2019-02-21 17:00 | 6h |  | start no earlier than 2019-02-21 09:00 | Marines Ánton Castelló [4%] | 0.24h | 0.24h | 5.04 | 5.04 | 5.04 | 10 h | 6 h |
| 241 | 7.3.6 | [v1v2] Estructura del codigo optimización | 20h | 2019-02-25 09:00 A | 2019-02-27 13:00 A |  | 100% |  | 2019-02-25 09:00 | 2019-02-27 13:00 | 20h |  | start no earlier than 2019-02-25 09:00 | Marines Ánton Castelló [20%] | 4h | 4h | 75.6 | 75.6 | 75.6 | 20 h | 20 h |
| 242 | 7.3.7 | [v1]Arreglos de ia y clases de personajes | 24.5h | 2019-02-26 15:00 A | 2019-03-01 15:30 A |  | 100% |  | 2019-02-26 15:00 | 2019-03-01 15:30 | 24.5h |  | start no earlier than 2019-02-26 09:00 | Marines Ánton Castelló [20%] | 4.9h | 4.9h | 91.8 | 91.8 | 91.8 | 25 h | 24,5 h |
| 243 | 7.3.8 | [v1]Arreglar Comunicación entre NPCs Blackboard | 0.01h | 2019-02-25 09:00 | 2019-02-25 09:00 |  |  |  | 2019-02-25 09:00 | 2019-02-25 09:00 | 0.01h | 62.5d | start no earlier than 2019-02-25 09:00 | Marines Ánton Castelló [20%] | 0h |  | 3.64 | 3.64 |  | 12 h | 0 h |
| 244 | 7.3.9 | [v1]Movimiento con steering behaviours | 25h | 2019-02-27 09:00 A | 2019-03-04 10:00 |  | 64% | 9h | 2019-02-27 09:00 | 2019-03-04 10:00 | 25h | 58.44d | start no earlier than 2019-02-27 09:00 | Débora Galdeano González [20%] | 5h | 3.2h | 114.4 | 114.4 | 74.8 | 16 h | 25 h |
| 245 | 7.3.10 | [v1]Waypoints para pathfinding continuo | 8.5h | 2019-03-04 09:00 A | 2019-03-05 09:30 A |  | 100% |  | 2019-03-04 09:00 | 2019-03-05 09:30 | 8.5h |  | start no earlier than 2019-03-04 09:00 | Débora Galdeano González [10%] | 0.85h | 0.85h | 20.9 | 20.9 | 20.9 | 20 h | 8,5 h |
| 246 | 7.3.11 | [v2]Diseño y creación de nivel | 28.5h | 2019-03-04 09:00 A | 2019-03-07 15:30 A |  | 100% |  | 2019-03-04 09:00 | 2019-03-07 15:30 | 28.5h |  | start no earlier than 2019-03-04 09:00 | Jose Ramon Barea Cecilia [25%]; María Sánchez Marqués [5%] | 8.55h | 8.55h | 177 | 177 | 177 | 18 h | 28,5 h |
| 247 | 7.3.12 | [v2]Errores de codigo relacionados con nivel | 10.3h | 2019-02-21 09:00 A | 2019-02-22 11:18 A |  | 100% |  | 2019-02-21 09:00 | 2019-02-22 11:18 | 10.3h |  | start no earlier than 2019-02-21 09:00 | Jose Ramon Barea Cecilia [5%]; María Sánchez Marqués [20%] | 2.58h | 2.58h | 56.5 | 56.5 | 56.5 | 12 h | 10,3 h |
| 248 | 7.3.13 | [v2]Implementacion de un sistema multicamaras | 0.01h | 2019-02-25 09:00 | 2019-02-25 09:00 | 247 |  |  | 2019-02-25 09:00 | 2019-02-25 09:00 | 0.01h | 62.5d | start no earlier than 2019-02-25 09:00 | Jose Ramon Barea Cecilia [12%] | 0h |  | 2.42 | 2.42 |  | 18 h | 0 h |
| 249 | 7.3.14 | [tds]Resto de la biblioteca (máx. 1/3), cuesheet y metadatos finales | 0.01h | 2019-03-01 09:00 | 2019-03-01 09:00 |  |  |  | 2019-03-01 09:00 | 2019-03-01 09:00 | 0.01h | 58.5d | start no earlier than 2019-03-01 09:00 | Jose Ramon Barea Cecilia [10%]; María Sánchez Marqués [10%] | 0h |  | 4.04 | 4.04 |  | 6 h | 0 h |
| 250 | 7.3.15 | [rv]Modelado de los personajes | 27h | 2019-02-20 09:00 A | 2019-02-24 12:00 A |  | 100% |  | 2019-02-20 09:00 | 2019-02-24 12:00 | 27h |  |  | María Sánchez Marqués [20%] | 5.4h | 5.4h | 112 | 112 | 112 | 35 h | 27 h |
| 251 | 7.3.16 | [rv]Texturizado de los personajes + uvmaping | 18h | 2019-02-20 09:00 A | 2019-02-22 11:00 |  | 56% | 8h | 2019-02-20 09:00 | 2019-02-22 11:00 | 18h | 65.31d |  | María Sánchez Marqués [20%]; Débora Galdeano González [20%] | 7.2h | 4h | 159.6 | 159.6 | 92.4 | 10 h | 18 h |
| 252 | 7.3.17 | [rv]Rigging Personajes | 4.25h | 2019-02-26 09:00 A | 2019-02-26 15:15 |  | 25% | 3.19h | 2019-02-26 09:00 | 2019-02-26 15:15 | 4.25h | 62.03d | start no earlier than 2019-02-26 09:00 | Jose Vicente Anton Coy [20%] | 0.85h | 0.21h | 18.9 | 18.9 | 7.42 | 9 h | 4,25 h |
| 253 | 7.3.18 | [tag]Operaciones de transformación: trasladar, rotar... | 5h | 2019-02-20 09:00 A | 2019-02-20 16:00 A |  | 100% |  | 2019-02-20 09:00 | 2019-02-20 16:00 | 5h |  |  | Jose Vicente Anton Coy [20%] | 1h | 1h | 21.6 | 21.6 | 21.6 | 7 h | 5 h |
| 254 | 7.3.19 | [tag]Iluminacion luz puntual y luz dirigida | 13h | 2019-02-25 09:00 A | 2019-02-26 16:00 A |  | 100% |  | 2019-02-25 09:00 | 2019-02-26 16:00 | 13h |  | start no earlier than 2019-02-25 09:00 | David Ramón Sevilla [20%] | 2.6h | 2.6h | 50.4 | 50.4 | 50.4 | 15 h | 13 h |
| 255 | 7.3.20 | [tag]Reflexion de phong | 5h | 2019-03-04 09:00 A | 2019-03-04 16:00 A |  | 100% |  | 2019-03-04 09:00 | 2019-03-04 16:00 | 5h |  | start no earlier than 2019-03-04 09:00 | David Ramón Sevilla [20%] | 1h | 1h | 21.6 | 21.6 | 21.6 | 12 h | 5 h |
| 256 | 7.3.21 | [tag]Estructura básica de la malla | 5.9h | 2019-02-25 09:00 A | 2019-02-25 16:54 A |  | 100% |  | 2019-02-25 09:00 | 2019-02-25 16:54 | 5.9h |  | start no earlier than 2019-02-25 09:00 | David Ramón Sevilla [16%] | 0.94h | 0.94h | 19.87 | 19.87 | 19.87 | 6 h | 5,9 h |
| 257 | 7.3.22 | [tag]Datos de mallas, texturas... | 7.5h | 2019-02-28 09:00 A | 2019-02-28 18:30 A |  | 100% |  | 2019-02-28 09:00 | 2019-02-28 18:30 | 7.5h |  | start no earlier than 2019-02-28 09:00 | David Ramón Sevilla [16%] | 1.2h | 1.2h | 24.48 | 24.48 | 24.48 | 7 h | 7,5 h |
| 258 | 7.3.23 | [tag]Dibujado de mallas | 5.9h | 2019-02-27 09:00 A | 2019-02-27 16:54 A |  | 100% |  | 2019-02-27 09:00 | 2019-02-27 16:54 | 5.9h |  | start no earlier than 2019-02-27 09:00 | David Ramón Sevilla [16%] | 0.94h | 0.94h | 19.87 | 19.87 | 19.87 | 8 h | 5,9 h |
| 259 | 7.3.24 | [tag]Estructura básica de la animación... | 4h | 2019-02-22 09:00 A | 2019-02-22 13:00 A |  | 100% |  | 2019-02-22 09:00 | 2019-02-22 13:00 | 4h |  | start no earlier than 2019-02-22 09:00 | David Ramón Sevilla [16%] | 0.64h | 0.64h | 14.4 | 14.4 | 14.4 | 7 h | 4 h |
| 260 | 7.3.25 | [tag]Estructura básica del gestor de recursos... | 7h | 2019-02-22 09:00 A | 2019-02-22 18:00 A |  | 100% |  | 2019-02-22 09:00 | 2019-02-22 18:00 | 7h |  | start no earlier than 2019-02-22 09:00 | Jose Vicente Anton Coy [16%] | 1.12h | 1.12h | 23.04 | 23.04 | 23.04 | 7h | 7 h |
| 261 | 7.3.26 | [tag]Lectura de disco con assimp | 4h | 2019-02-27 09:00 A | 2019-02-27 13:00 A |  | 100% |  | 2019-02-27 09:00 | 2019-02-27 13:00 | 4h |  | start no earlier than 2019-02-27 09:00 | David Ramón Sevilla [16%] | 0.64h | 0.64h | 14.4 | 14.4 | 14.4 | 9 h | 4 h |
| 262 | 7.3.27 | [PM]Comparar la planificación prevista y real en Project hito 3 | 1.5h | 2019-03-05 09:00 A | 2019-03-05 10:30 A |  | 100% |  | 2019-03-05 09:00 | 2019-03-05 10:30 | 1.5h |  | start no earlier than 2019-03-05 09:00 | Jose Ramon Barea Cecilia [10%] | 0.15h | 0.15h | 5 | 5 | 5 | 1,5 h | 1,5 h |
| 263 | 7.3.28 | [PM]Confeccionar Informe de iteración 11 | 3.5h | 2019-03-06 09:00 A | 2019-03-06 12:30 A | 262 | 100% |  | 2019-03-06 09:00 | 2019-03-06 12:30 | 3.5h |  | start no earlier than 2019-03-06 09:00 | María Sánchez Marqués [20%]; Jose Ramon Barea Cecilia [5%] | 0.88h | 0.88h | 22.5 | 22.5 | 22.5 | 4 h | 3,5 h |

| ID | WBS | Task | Type | Duration | Start | Finish | Predecessors | Complete | Remaining | Baseline start | Baseline finish | Baseline duration | Total slack | Constraint | Resources | Work | Actual work | Cost | Baseline cost | Actual cost | Horas Estimadas | Horas realizadas |
| --- | --- | --- | --- | --- | --- | --- | --- | --- | --- | --- | --- | --- | --- | --- | --- | --- | --- | --- | --- | --- | --- | --- |
| 264 | 7.4 | **Iteracion 12** |  | 16.38d | 2019-03-06 09:00 A | 2019-03-28 12:00 |  | 94% | 0.96d | 2019-03-06 09:00 | 2019-03-28 12:00 | 16.38d | 40.19d | start no earlier than 2019-03-06 09:00 |  | 150.89h | 142.44h | 3,066.04 | 3,066.04 | 2,898.09 |  |  |
| 265 | 7.4.1 | [PM]Detallar plan de iteracion 12. Creación Subtareas y precedencias en Project |  | 2h | 2019-03-06 09:00 A | 2019-03-06 11:00 A |  | 100% |  | 2019-03-06 09:00 | 2019-03-06 11:00 | 2h |  |  | Jose Ramon Barea Cecilia [40%] | 0.8h | 0.8h | 24 | 24 | 24 | 2,4 |  |
| 266 | 7.4.2 | [PM]Detallar plan de iteracion 12 Asignar recursos a las tareas en Project |  | 1h | 2019-03-06 09:00 A | 2019-03-06 10:00 A |  | 100% |  | 2019-03-06 09:00 | 2019-03-06 10:00 | 1h |  |  | Jose Ramon Barea Cecilia [40%] | 0.4h | 0.4h | 16 | 16 | 16 | 3,4 |  |
| 267 | 7.4.3 | [PM]Registrar tiempos y % de realización de tareas en Project |  | 48min | 2019-03-06 09:00 A | 2019-03-06 09:48 A |  | 100% |  | 2019-03-06 09:00 | 2019-03-06 09:48 | 48min |  |  | Todos [4%] | 0.03h | 0.03h |  |  |  | 48 mins | 48 mins |
| 268 | 7.4.4 | [v2]Diseño e implementación b.objetos (final) |  | 11h | 2019-03-07 09:00 A | 2019-03-08 12:00 A |  | 100% |  | 2019-03-07 09:00 | 2019-03-08 12:00 | 11h |  | start no earlier than 2019-03-07 09:00 | Todos [4%] | 0.44h | 0.44h |  |  |  |  | 11 |
| 269 | 7.4.5 | [v2]Diseño e implementacion b.componentes (final) |  | 11h | 2019-03-07 09:00 A | 2019-03-08 12:00 A |  | 100% |  | 2019-03-07 09:00 | 2019-03-08 12:00 | 11h |  | start no earlier than 2019-03-07 09:00 | Todos [4%] | 0.44h | 0.44h |  |  |  |  | 11 |
| 270 | 7.4.6 | [v1]Mejoras y arreglos de la IA |  | 44h | 2019-03-08 09:00 A | 2019-03-15 13:00 A |  | 100% |  | 2019-03-08 09:00 | 2019-03-15 13:00 | 44h |  | start no earlier than 2019-03-08 09:00 | Débora Galdeano González [25%]; Marines Ánton Castelló [25%] | 22h | 22h | 450 | 450 | 450 | 30 | 44 |
| 271 | 7.4.7 | [v1]Sistema de control de movimiento con Steering Behaviours |  | 31h | 2019-03-14 09:00 A | 2019-03-19 18:00 A |  | 100% |  | 2019-03-14 09:00 | 2019-03-19 18:00 | 31h |  | start no earlier than 2019-03-14 09:00 | Débora Galdeano González [25%]; Marines Ánton Castelló [25%] | 15.5h | 15.5h | 320 | 320 | 320 | 20 | 31 |
| 272 | 7.4.8 | [v1]Comportamientos grupales o comunicación basica entre NPCs |  | 19.5h | 2019-03-19 09:00 A | 2019-03-21 12:30 |  | 75% | 4.88h | 2019-03-19 09:00 | 2019-03-21 12:30 | 19.5h | 45.12d | start no earlier than 2019-03-19 09:00 | Débora Galdeano González [25%]; Marines Ánton Castelló [25%] | 9.75h | 7.31h | 205 | 205 | 156.25 | 20 | 19,5 |
| 273 | 7.4.9 | [v2]Level-Of-Detail en objetos y terrrenos 3D |  | 0.1h | 2019-03-07 09:00 | 2019-03-07 09:06 |  |  |  | 2019-03-07 09:00 | 2019-03-07 09:06 | 0.1h | 54.49d | start no earlier than 2019-03-07 09:00 | María Sánchez Marqués [10%]; Jose Vicente Anton Coy [10%] | 0.02h |  | 4.18 | 4.18 |  | 12 |  |
| 274 | 7.4.10 | [v2]Tarea para clipping, motor grafico |  | 37h | 2019-03-07 09:00 A | 2019-03-13 16:00 |  | 75% | 9.25h | 2019-03-07 09:00 | 2019-03-13 16:00 | 37h | 50.94d | start no earlier than 2019-03-07 09:00 | Jose Vicente Anton Coy [10%]; David Ramón Sevilla [10%] | 7.4h | 5.55h | 136.8 | 136.8 | 103.5 | 16 | 37 |
| 275 | 7.4.11 | [v2]Tarea secundaria de la asignatura |  | 20h | 2019-03-11 09:00 A | 2019-03-13 13:00 A |  | 100% |  | 2019-03-11 09:00 | 2019-03-13 13:00 | 20h |  | start no earlier than 2019-03-11 09:00 | María Sánchez Marqués [40%]; Jose Vicente Anton Coy [20%] | 12h | 12h | 243.6 | 243.6 | 243.6 | 12 | 20 |
| 276 | 7.4.12 | [pd]Making of juego |  | 23h | 2019-03-11 09:00 A | 2019-03-13 18:00 A |  | 100% |  | 2019-03-11 09:00 | 2019-03-13 18:00 | 23h |  | start no earlier than 2019-03-11 09:00 | Jose Ramon Barea Cecilia [20%] | 4.6h | 4.6h | 96 | 96 | 96 | 12 | 23 |
| 277 | 7.4.13 | [pd]Trailer juego |  | 34h | 2019-03-13 18:00 A | 2019-03-20 10:00 A | 276 | 100% |  | 2019-03-13 18:00 | 2019-03-20 10:00 | 34h |  | start no earlier than 2019-03-13 09:00 | Jose Ramon Barea Cecilia [20%] | 6.8h | 6.8h | 140 | 140 | 140 | 12 | 34 |
| 278 | 7.4.14 | [rv]Texturizado de los personajes |  | 35h | 2019-03-22 09:00 A | 2019-03-28 12:00 A |  | 100% |  | 2019-03-22 09:00 | 2019-03-28 12:00 | 35h |  | start no earlier than 2019-03-22 09:00 | Débora Galdeano González [10%]; Marines Ánton Castelló [10%]; María Sánchez Marqués [4%] | 8.4h | 8.4h | 172.8 | 172.8 | 172.8 | 10 | 35 |
| 279 | 7.4.15 | [rv]Rigging de los personajes |  | 0.1h | 2019-03-12 09:00 | 2019-03-12 09:06 |  |  |  | 2019-03-12 09:00 | 2019-03-12 09:06 | 0.1h | 51.49d | start no earlier than 2019-03-12 09:00 | Jose Vicente Anton Coy [20%] | 0.02h |  | 3.96 | 3.96 |  | 24 |  |
| 280 | 7.4.16 | [tds]Resto de la biblioteca (máx. 1/3), cuesheet y metadatos finales |  | 12.5h | 2019-03-18 09:00 A | 2019-03-19 15:30 A |  | 100% |  | 2019-03-18 09:00 | 2019-03-19 15:30 | 12.5h |  | start no earlier than 2019-03-18 09:00 | David Ramón Sevilla [10%]; Jose Ramon Barea Cecilia [10%]; María Sánchez Marqués [10%] | 3.75h | 3.75h | 78.3 | 78.3 | 78.3 | 20 | 12,5 |
| 281 | 7.4.17 | [tag]Estructura básica de la interfaz |  | 6h | 2019-03-06 09:00 A | 2019-03-06 17:00 A |  | 100% |  | 2019-03-06 09:00 | 2019-03-06 17:00 | 6h |  |  | Jose Vicente Anton Coy | 2.4h | 2.4h | 61.2 | 61.2 | 61.2 |  |  |
| 282 | 7.4.18 | [tag]Tarea shader básico (phong) y hud |  | 28h | 2019-03-06 09:00 A | 2019-03-11 13:00 A |  | 100% |  | 2019-03-06 09:00 | 2019-03-11 13:00 | 28h |  |  | David Ramón Sevilla [20%] | 5.6h | 5.6h | 104.4 | 104.4 | 104.4 | 18 | 28 |
| 283 | 7.4.19 | [tag]Integración con la aplicación |  | 41h | 2019-03-11 09:00 A | 2019-03-18 10:00 |  | 75% | 10.25h | 2019-03-11 09:00 | 2019-03-18 10:00 | 41h | 48.44d | start no earlier than 2019-03-11 09:00 | David Ramón Sevilla [20%]; Jose Vicente Anton Coy [20%] | 16.4h | 12.3h | 302.4 | 302.4 | 228.6 | 26 | 41 |
| 284 | 7.4.20 | [tag]Realización de una fachada entre el motor y el videojuego |  | 3.4h | 2019-03-14 09:00 A | 2019-03-14 12:24 A |  | 100% |  | 2019-03-14 09:00 | 2019-03-14 12:24 | 3.4h |  | start no earlier than 2019-03-14 09:00 | David Ramón Sevilla [20%] | 0.68h | 0.68h | 15.84 | 15.84 | 15.84 |  | 3,4 |
| 285 | 7.4.21 | [tag]Bounding boxes y animaciones |  | 22h | 2019-03-18 09:00 A | 2019-03-20 17:00 A |  | 100% |  | 2019-03-18 09:00 | 2019-03-20 17:00 | 22h |  | start no earlier than 2019-03-18 09:00 | David Ramón Sevilla [20%] | 4.4h | 4.4h | 82.8 | 82.8 | 82.8 | 10 | 22 |
| 286 | 7.4.22 | [tag]Portales |  | 0.1h | 2019-03-20 09:00 | 2019-03-20 09:06 |  |  |  | 2019-03-20 09:00 | 2019-03-20 09:06 | 0.1h | 45.49d | start no earlier than 2019-03-20 09:00 | David Ramón Sevilla [20%] | 0.02h |  | 3.96 | 3.96 |  | 23 |  |
| 287 | 7.4.23 | [PM]Preparación presentación del hito 3 |  | 35h | 2019-03-18 09:00 A | 2019-03-22 12:00 A |  | 100% |  | 2019-03-18 09:00 | 2019-03-22 12:00 | 35h |  | start no earlier than 2019-03-18 09:00 | Jose Ramon Barea Cecilia [40%]; María Sánchez Marqués [40%] | 28h | 28h | 576 | 576 | 576 | 24 | 35 |
| 288 | 7.4.24 | [PM]Comparar la planificación prevista y real en Iteracion 12 |  | 2.2h | 2019-03-25 09:00 A | 2019-03-25 11:12 A |  | 100% |  | 2019-03-25 09:00 | 2019-03-25 11:12 | 2.2h |  | start no earlier than 2019-03-25 09:00 | Jose Ramon Barea Cecilia [20%] | 0.44h | 0.44h | 12.8 | 12.8 | 12.8 | 1,5 | 2,2 |
| 289 | 7.4.25 | [PM]Confeccionar Informe de iteración 12 |  | 3h | 2019-03-25 11:12 A | 2019-03-25 16:12 A | 288 | 100% |  | 2019-03-25 11:12 | 2019-03-25 16:12 | 3h |  | start no earlier than 2019-03-24 09:00 | María Sánchez Marqués [20%] | 0.6h | 0.6h | 16 | 16 | 16 |  |  |
| 290 | 8 | Versión Producción - Lista para pulir | milestone | 0d | 2019-03-28 12:00 | 2019-03-28 12:00 | 194 |  |  | 2019-03-28 12:00 | 2019-03-28 12:00 | 0d | 39.12d | start no earlier than 2019-03-06 09:00 |  |  |  |  |  |  |  |  |

Notes:
- 273: quiza esta tarea la quitamos, porque no tiene utilidad en el juego por nuestro tipo de camara

| ID | WBS | Task | Type | Duration | Start | Finish | Predecessors | Complete | Remaining | Baseline start | Baseline finish | Baseline duration | Total slack | Constraint | Resources | Work | Actual work | Cost | Baseline cost | Actual cost | Horas Estimadas | Horas realizadas |
| --- | --- | --- | --- | --- | --- | --- | --- | --- | --- | --- | --- | --- | --- | --- | --- | --- | --- | --- | --- | --- | --- | --- |
| 291 | 9 | **hito 4** |  | 41.56d | 2019-03-27 09:00 A | 2019-05-23 15:30 |  | 40% | 25.09d | 2019-03-27 09:00 | 2019-05-22 13:00 | 40.5d | 0d | finish no later than 2019-05-23 19:00 |  | 315.88h | 128.15h | 5,962.83 | 5,901.14 | 2,394.44 |  |  |
| 292 | 9.1 | **Iteracion 13** |  | 18d | 2019-03-27 09:00 A | 2019-04-22 09:01 |  | 94% | 1.07d | 2019-03-27 09:00 | 2019-04-22 09:01 | 18d | 23.56d | start no earlier than 2019-03-27 09:00 |  | 138.35h | 128.15h | 2,643.9 | 2,643.9 | 2,394.44 |  |  |
| 293 | 9.1.1 | [PM]Detallar plan de iteracion 13. Creación Subtareas y precedencias en Project |  | 2.4h | 2019-03-27 09:00 A | 2019-03-27 11:24 A |  | 100% |  | 2019-03-27 09:00 | 2019-03-27 11:24 | 2.4h |  |  | Débora Galdeano González [40%] | 0.96h | 0.96h | 29.92 | 29.92 | 29.92 | 2,4 | 2,4 |
| 294 | 9.1.2 | [PM]Detallar plan de iteracion 13 Asignar recursos a las tareas en Project |  | 3.4h | 2019-03-27 09:00 A | 2019-03-27 12:24 A |  | 100% |  | 2019-03-27 09:00 | 2019-03-27 12:24 | 3.4h |  |  | Débora Galdeano González [40%] | 1.36h | 1.36h | 38.72 | 38.72 | 38.72 | 3,4 | 3,4 |
| 295 | 9.1.3 | [PM]Registrar tiempos y % de realización de tareas en Project |  | 0.8h | 2019-03-27 09:00 A | 2019-03-27 09:48 A |  | 100% |  | 2019-03-27 09:00 | 2019-03-27 09:48 | 0.8h |  |  | Todos [4%] | 0.03h | 0.03h |  |  |  | 0,8 | 0,8 |
| 296 | 9.1.4 | [v2]Diseño e implementación b.objetos (final) |  | 44.38h | 2019-03-27 09:00 A | 2019-04-03 15:22 A |  | 100% |  | 2019-03-27 09:00 | 2019-04-03 15:22 | 44.38h |  |  | Todos [10%] | 4.44h | 4.44h |  |  |  |  | 44,38 |
| 297 | 9.1.5 | [v2]Diseño e implementacion b.componentes (final) |  | 25.25h | 2019-03-27 09:00 A | 2019-04-01 10:15 A |  | 100% |  | 2019-03-27 09:00 | 2019-04-01 10:15 | 25.25h |  |  | Todos [10%] | 2.52h | 2.52h |  |  |  | 16 | 25,25 |
| 298 | 9.1.6 | [v1]Comportamientos grupales o comunicación basica entre NPCs |  | 0.01h | 2019-04-15 09:00 | 2019-04-15 09:00 |  |  |  | 2019-04-15 09:00 | 2019-04-15 09:00 | 0.01h | 28.56d | start no earlier than 2019-04-15 09:00 | Débora Galdeano González [40%]; Marines Ánton Castelló [40%] | 0.01h |  | 16.16 | 16.16 |  | 20 | 0,01 (0) |
| 299 | 9.1.7 | [v1]Level-Of-Detail para la IA |  | 1.8h | 2019-04-08 09:00 A | 2019-04-08 10:48 A |  | 100% |  | 2019-04-08 09:00 | 2019-04-08 10:48 | 1.8h |  | start no earlier than 2019-04-08 09:00 | Débora Galdeano González [40%] | 0.72h | 0.72h | 24.64 | 24.64 | 24.64 | 20 | 1,8 |
| 300 | 9.1.8 | [v1]Integracion de comportamientos en el juego |  | 36.15h | 2019-04-01 09:00 A | 2019-04-05 15:09 |  | 80% | 7.23h | 2019-04-01 09:00 | 2019-04-05 15:09 | 36.15h | 34.04d | start no earlier than 2019-04-01 09:00 | Débora Galdeano González [40%]; Marines Ánton Castelló [40%] | 28.92h | 23.14h | 594.4 | 594.4 | 478.72 | 30 | 36,15 |
| 301 | 9.1.9 | [v2]Agregar nivel 2 |  | 12.34h | 2019-04-08 09:00 A | 2019-04-09 15:20 |  | 90% | 1.24h | 2019-04-08 09:00 | 2019-04-09 15:20 | 12.34h | 32.02d | start no earlier than 2019-04-08 09:00 | Jose Ramon Barea Cecilia [40%] | 4.94h | 4.44h | 106.72 | 106.72 | 96.84 | 14 | 12,34 |
| 302 | 9.1.10 | [v2]menu de selección de personaje y otros menus |  | 33.62h | 2019-04-01 09:00 A | 2019-04-05 10:37 A |  | 100% |  | 2019-04-01 09:00 | 2019-04-05 10:37 | 33.62h |  | start no earlier than 2019-04-01 09:00 | Marines Ánton Castelló [40%] | 13.45h | 13.45h | 249.26 | 249.26 | 249.26 | 10 | 33,62 |
| 303 | 9.1.11 | [v2]Tarea secundaria para integracion funcionalidades opengl en el juego |  | 0.01h | 2019-04-10 09:00 | 2019-04-10 09:00 | 299 |  |  | 2019-04-10 09:00 | 2019-04-10 09:00 | 0.01h | 31.56d | start no earlier than 2019-04-10 09:00 | David Ramón Sevilla [40%]; Jose Vicente Anton Coy [40%] | 0.01h |  | 14.54 | 14.54 |  | 16 | 0,01 (0) |
| 304 | 9.1.12 | [v2]Tarea secundaria para arreglos y mejoras |  | 40.02h | 2019-04-15 09:00 A | 2019-04-22 09:01 A |  | 100% |  | 2019-04-15 09:00 | 2019-04-22 09:01 | 40.02h |  | start no earlier than 2019-04-15 09:00 | Débora Galdeano González [40%] | 16.01h | 16.01h | 360.98 | 360.98 | 360.98 | 20 | 40,02 |
| 305 | 9.1.13 | [v2]Implementación de un sistema multicámaras | manual | 0.75h | 2019-03-27 09:00 A | 2019-03-27 09:45 A |  | 100% |  | 2019-03-27 09:00 | 2019-03-27 09:45 | 0.75h |  |  | Marines Ánton Castelló [10%] | 0.07h | 0.07h | 3.15 | 3.15 | 3.15 |  | 0,75 |
| 306 | 9.1.14 | [tds]Arreglos en tablas cuesheet y metadatos |  | 0.01h | 2019-04-01 09:00 | 2019-04-01 09:00 |  |  |  | 2019-04-01 09:00 | 2019-04-01 09:00 | 0.01h | 38.56d | start no earlier than 2019-04-01 09:00 | Jose Ramon Barea Cecilia [40%] | 0h |  | 8.08 | 8.08 |  |  | 0,01 (0) |
| 307 | 9.1.15 | [tds]Integracion de sonidos en el videojuego |  | 2.18h | 2019-04-08 09:00 A | 2019-04-08 11:10 |  | 2% | 2.14h | 2019-04-08 09:00 | 2019-04-08 11:10 | 2.18h | 33.29d | start no earlier than 2019-04-08 09:00 | David Ramón Sevilla [40%] | 0.87h | 0.02h | 22.9 | 22.9 | 7.51 | 12 | 2,18 |
| 308 | 9.1.16 | [rv]Texturizar Objetos |  | 0.01h | 2019-04-01 09:00 | 2019-04-01 09:00 |  |  |  | 2019-04-01 09:00 | 2019-04-01 09:00 | 0.01h | 38.56d | start no earlier than 2019-04-01 09:00 | Débora Galdeano González [10%] | 0h |  | 2.22 | 2.22 |  | 10 | 0,01 (0) |
| 309 | 9.1.17 | [rv]Texturizar personajes |  | 0.01h | 2019-04-03 09:00 | 2019-04-03 09:00 |  |  |  | 2019-04-03 09:00 | 2019-04-03 09:00 | 0.01h | 36.56d | start no earlier than 2019-04-03 09:00 | Marines Ánton Castelló [10%] | 0h |  | 1.82 | 1.82 |  | 18 | 0,01 (0) |
| 310 | 9.1.18 | [rv]Modelar nivel 2 |  | 50.38h | 2019-04-03 09:00 A | 2019-04-11 11:22 A |  | 100% |  | 2019-04-03 09:00 | 2019-04-11 11:22 | 50.38h |  | start no earlier than 2019-04-03 09:00 | Jose Ramon Barea Cecilia [40%] | 20.15h | 20.15h | 411.04 | 411.04 | 411.04 | 14 | 50,38 |
| 311 | 9.1.19 | [rv]modelar objetos y armas |  | 0.01h | 2019-04-04 09:00 | 2019-04-04 09:00 |  |  |  | 2019-04-04 09:00 | 2019-04-04 09:00 | 0.01h | 35.56d | start no earlier than 2019-04-04 09:00 | María Sánchez Marqués [40%] | 0h |  | 8.08 | 8.08 |  |  | 0,01 (0) |
| 312 | 9.1.20 | [rv]modelar rey pollo |  | 25.9h | 2019-04-01 09:00 A | 2019-04-04 10:54 A |  | 100% |  | 2019-04-01 09:00 | 2019-04-04 10:54 | 25.9h |  | start no earlier than 2019-04-01 09:00 | María Sánchez Marqués [20%] | 5.18h | 5.18h | 107.6 | 107.6 | 107.6 | 14 | 25,9 |
| 313 | 9.1.21 | [rv]rigging de personajes |  | 0.01h | 2019-04-03 09:00 | 2019-04-03 09:00 |  |  |  | 2019-04-03 09:00 | 2019-04-03 09:00 | 0.01h | 36.56d | start no earlier than 2019-04-03 09:00 | Jose Vicente Anton Coy [10%] | 0h |  | 1.82 | 1.82 |  |  | 0,01 (0) |
| 314 | 9.1.22 | [rv]captura de movimiento |  | 19.18h | 2019-04-08 09:00 A | 2019-04-10 12:10 |  | 90% | 1.92h | 2019-04-08 09:00 | 2019-04-10 12:10 | 19.18h | 31.16d | start no earlier than 2019-04-08 09:00 | Todos [20%] | 3.84h | 3.45h |  |  |  | 10 | 19,18 |
| 315 | 9.1.23 | [pd]Video escena final del juego |  | 21.15h | 2019-04-10 09:00 A | 2019-04-12 16:09 |  | 50% | 10.57h | 2019-04-10 09:00 | 2019-04-12 16:09 | 21.15h | 28.92d | start no earlier than 2019-04-10 09:00 | Jose Ramon Barea Cecilia [20%] | 4.23h | 2.12h | 88.6 | 88.6 | 46.3 | 20 | 21,15 |
| 316 | 9.1.24 | [tag]Optimizacion del codigo del motor |  | 27.04h | 2019-04-01 09:00 A | 2019-04-04 12:02 A |  | 100% |  | 2019-04-01 09:00 | 2019-04-04 12:02 | 27.04h |  | start no earlier than 2019-04-01 09:00 | Jose Vicente Anton Coy [40%] | 10.82h | 10.82h | 201.89 | 201.89 | 201.89 | 14 | 27,04 |
| 317 | 9.1.25 | [tag]Otros shaders |  | 20.01h | 2019-04-02 09:00 A | 2019-04-04 15:00 A |  | 100% |  | 2019-04-02 09:00 | 2019-04-04 15:00 | 20.01h |  | start no earlier than 2019-04-02 09:00 | David Ramón Sevilla [40%] | 8h | 8h | 151.27 | 151.27 | 151.27 | 12 | 20,01 |
| 318 | 9.1.26 | [tag]Portales |  | 0.01h | 2019-04-08 09:00 | 2019-04-08 09:00 |  |  |  | 2019-04-08 09:00 | 2019-04-08 09:00 | 0.01h | 33.56d | start no earlier than 2019-04-08 09:00 | Jose Vicente Anton Coy [10%]; David Ramón Sevilla [10%] | 0h |  | 3.64 | 3.64 |  |  | 0,01 (0) |
| 319 | 9.1.27 | [tag]Shadow Mapping |  | 2.82h | 2019-04-01 09:00 A | 2019-04-01 11:49 |  | 3% | 2.74h | 2019-04-01 09:00 | 2019-04-01 11:49 | 2.82h | 38.21d | start no earlier than 2019-04-01 09:00 | David Ramón Sevilla [20%] | 0.56h | 0.02h | 13.75 | 13.75 | 3.9 | 14 | 2,82 |
| 320 | 9.1.28 | [tag]Tarea secundaria para entregable arbitrario |  | 41.75h | 2019-04-10 09:00 A | 2019-04-17 10:45 A |  | 100% |  | 2019-04-10 09:00 | 2019-04-17 10:45 | 41.75h |  | start no earlier than 2019-04-10 09:00 | Jose Vicente Anton Coy [10%]; David Ramón Sevilla [10%] | 8.35h | 8.35h | 153.9 | 153.9 | 153.9 | 15 | 41,75 |
| 321 | 9.1.29 | [PM]Comparar la planificación prevista y real en Iteracion 13 |  | 3h | 2019-04-17 09:00 A | 2019-04-17 12:00 A |  | 100% |  | 2019-04-17 09:00 | 2019-04-17 12:00 | 3h |  | start no earlier than 2019-04-17 09:00 | Débora Galdeano González [10%] | 0.3h | 0.3h | 8.8 | 8.8 | 8.8 |  |  |
| 322 | 9.1.30 | [PM]Confeccionar Informe de iteración 13 |  | 4h | 2019-04-17 09:00 A | 2019-04-17 13:00 A |  | 100% |  | 2019-04-17 09:00 | 2019-04-17 13:00 | 4h |  | start no earlier than 2019-04-17 09:00 | Marines Ánton Castelló [10%]; Débora Galdeano González [10%] | 0.8h | 0.8h | 20 | 20 | 20 |  |  |
| 323 | 9.1.31 | [General] Scrum |  | 18h | 2019-03-27 09:00 A | 2019-03-29 11:00 A |  | 100% |  | 2019-03-27 09:00 | 2019-03-29 11:00 | 18h |  |  | Todos [10%] | 1.8h | 1.8h |  |  |  |  |  |
| 324 | 9.2 | Semana santa |  | 1d | 2019-04-17 09:00 | 2019-04-17 19:00 |  |  |  | 2019-04-17 09:00 | 2019-04-17 19:00 | 1d | 24.5d | start no earlier than 2019-04-17 09:00 |  |  |  |  |  |  |  |  |

| ID | WBS | Task | Type | Duration | Start | Finish | Predecessors | Baseline start | Baseline finish | Baseline duration | Total slack | Constraint | Resources | Work | Cost | Baseline cost | Horas Estimadas | Horas realizadas |
| --- | --- | --- | --- | --- | --- | --- | --- | --- | --- | --- | --- | --- | --- | --- | --- | --- | --- | --- |
| 325 | 9.3 | **Iteracion 14** |  | 13.56d | 2019-05-06 09:00 | 2019-05-23 15:30 |  | 2019-05-06 09:00 | 2019-05-22 13:00 | 12.5d | 0d | start no earlier than 2019-05-05 09:00 |  | 177.53h | 3,318.94 | 3,257.24 |  |  |
| 326 | 9.3.1 | [PM]Detallar plan de iteración Abril-Mayo. Creación Subtareas y precedencias en Project |  | 4h | 2019-05-06 09:00 | 2019-05-06 13:00 |  | 2019-05-06 09:00 | 2019-05-06 11:24 | 2.4h | 13.06d |  | Débora Galdeano González [40%] | 1.6h | 44 | 29.92 | 2,4 |  |
| 327 | 9.3.2 | [PM]Detallar plan de iteración Abril-Mayo. Asignar recursos a las tareas en Project |  | 3h | 2019-05-06 09:00 | 2019-05-06 12:00 |  | 2019-05-06 09:00 | 2019-05-06 12:24 | 3.4h | 13.19d |  | Débora Galdeano González [40%] | 1.2h | 35.2 | 38.72 | 3,4 |  |
| 328 | 9.3.3 | [PM]Registrar tiempos y % de realización de tareas en Project |  | 0.8h | 2019-05-06 09:00 | 2019-05-06 09:48 |  | 2019-05-06 09:00 | 2019-05-06 09:48 | 0.8h | 13.46d |  | Todos [4%] | 0.03h |  |  | 0,8 | 0,8 |
| 329 | 9.3.4 | [v2]Diseño e implementación b.objetos (final) |  | 10h | 2019-05-06 09:00 | 2019-05-07 11:00 |  | 2019-05-06 09:00 | 2019-05-07 11:00 | 10h | 12.31d |  | Todos [10%] | 1h |  |  | 10 | 10 |
| 330 | 9.3.5 | [v2]Diseño e implementacion b.componentes (final) |  | 21h | 2019-05-06 09:00 | 2019-05-08 16:00 |  | 2019-05-06 09:00 | 2019-05-07 19:00 | 16h | 10.94d |  | Todos [10%] | 2.1h |  |  | 16 | 21 |
| 331 | 9.3.6 | [v1v2]Reiniciar partida, arboles, LOD |  | 16.5h | 2019-05-08 09:00 | 2019-05-10 09:30 |  | 2019-05-08 09:00 | 2019-05-13 17:00 | 30h | 9.5d | start no earlier than 2019-05-08 09:00 | Débora Galdeano González [40%]; Marines Ánton Castelló [40%] | 13.2h | 280 | 496 | 30 | 16,5 |
| 332 | 9.3.7 | [v1]Integracion de comportamientos en el juego |  | 53.5h | 2019-05-08 09:00 | 2019-05-16 16:30 |  | 2019-05-08 09:00 | 2019-05-13 17:00 | 30h | 4.88d | start no earlier than 2019-05-08 09:00 | Débora Galdeano González [40%]; Marines Ánton Castelló [40%] | 42.8h | 872 | 496 | 30 | 53,5 |
| 333 | 9.3.8 | [v2]Agregar nivel 2 |  | 11h | 2019-05-08 09:00 | 2019-05-09 12:00 |  | 2019-05-08 09:00 | 2019-05-08 13:00 | 4h | 10.19d | start no earlier than 2019-05-08 09:00 | María Sánchez Marqués [40%] | 4.4h | 96 | 80 |  | 11 |
| 334 | 9.3.9 | [v2]Tarea secundaria para integracion funcionalidades opengl en el juego |  | 16h | 2019-05-08 09:00 | 2019-05-09 19:00 |  | 2019-05-08 09:00 | 2019-05-09 19:00 | 16h | 9.56d | start no earlier than 2019-05-08 09:00 | David Ramón Sevilla [40%]; Jose Vicente Anton Coy [40%] | 12.8h | 244.8 | 244.8 | 16 | 16 |
| 335 | 9.3.10 | [v2]Tarea secundaria para arreglos y mejoras |  | 68.5h | 2019-05-13 09:00 | 2019-05-23 15:30 |  | 2019-05-13 09:00 | 2019-05-20 16:00 | 45h | 0d | start no earlier than 2019-05-13 09:00 | Todos [10%] | 6.85h |  |  | 45 | 68,5 |
| 336 | 9.3.11 | [tds]Arreglos en tablas cuesheet y metadatos |  | 1h | 2019-05-10 09:00 | 2019-05-10 10:00 |  | 2019-05-10 09:00 | 2019-05-10 13:00 | 4h | 9.44d | start no earlier than 2019-05-10 09:00 | Jose Ramon Barea Cecilia [10%] | 0.1h | 4 | 100 |  |  |
| 337 | 9.3.12 | [tds]Integracion de sonidos en el videojuego |  | 76.5h | 2019-05-10 09:00 | 2019-05-23 15:30 |  | 2019-05-13 09:00 | 2019-05-14 13:00 | 12h | 0d | start no earlier than 2019-05-10 09:00 | David Ramón Sevilla [10%]; Jose Ramon Barea Cecilia [10%]; María Sánchez Marqués [10%] | 22.95h | 449.5 | 494 | 12 | 76,5 |
| 338 | 9.3.13 | [rv]Texturizar Objetos |  | 55.5h | 2019-05-14 09:00 | 2019-05-22 18:30 |  | 2019-05-14 09:00 | 2019-05-15 19:00 | 16h | 0.62d | start no earlier than 2019-05-14 09:00 | Marines Ánton Castelló [10%]; Débora Galdeano González [10%]; David Ramón Sevilla [10%] | 16.65h | 327.7 | 68 | 16 | 55,5 |
| 339 | 9.3.14 | [rv]Texturizar personajes |  | 30.75h | 2019-05-14 09:00 | 2019-05-17 17:45 |  | 2019-05-14 09:00 | 2019-05-15 19:00 | 16h | 3.72d | start no earlier than 2019-05-14 09:00 | Marines Ánton Castelló [10%]; Débora Galdeano González [10%]; David Ramón Sevilla [10%] | 9.22h | 184.15 | 68 | 16 | 30,75 |
| 340 | 9.3.15 | [rv]modelar objetos y armas |  | 27.85h | 2019-05-13 09:00 | 2019-05-16 12:51 |  | 2019-05-13 09:00 | 2019-05-14 19:00 | 16h | 5.08d | start no earlier than 2019-05-13 09:00 | María Sánchez Marqués [40%]; David Ramón Sevilla [10%] | 13.93h | 282.73 | 136 | 16 | 27,85 |
| 341 | 9.3.16 | [rv]rigging de personajes |  | 39h | 2019-05-16 09:00 | 2019-05-22 18:00 |  | 2019-05-16 09:00 | 2019-05-17 19:00 | 16h | 0.69d | start no earlier than 2019-05-16 09:00 | Jose Vicente Anton Coy [10%] | 3.9h | 72 | 30.6 | 16 | 39 |
| 342 | 9.3.17 | [rv]captura de movimiento |  | 6.15h | 2019-05-20 09:00 | 2019-05-20 17:09 |  | 2019-05-20 09:00 | 2019-05-21 13:00 | 12h | 2.79d | start no earlier than 2019-05-20 09:00 | Todos [10%] | 0.61h |  |  | 12 | 6,15 |
| 343 | 9.3.18 | [rv]arreglos y mejoras |  | 14h | 2019-05-21 09:00 | 2019-05-22 17:00 |  | 2019-05-21 09:00 | 2019-05-21 16:00 | 5h | 0.81d | start no earlier than 2019-05-21 09:00 | Todos [10%] | 1.4h |  |  |  | 14 |
| 344 | 9.3.19 | [pd]creditos |  | 0.01h | 2019-05-16 09:00 | 2019-05-16 09:00 |  | 2019-05-16 09:00 | 2019-05-16 16:00 | 5h | 5.56d | start no earlier than 2019-05-16 09:00 | Jose Ramon Barea Cecilia [10%] | 0h | 2.02 | 12 |  |  |
| 345 | 9.3.20 | [pd]Video escena final del juego |  | 34.8h | 2019-05-17 09:00 | 2019-05-23 11:48 |  | 2019-05-20 09:00 | 2019-05-22 13:00 | 20h | 0.21d | start no earlier than 2019-05-17 09:00 | Jose Ramon Barea Cecilia [10%] | 3.48h | 71.6 | 420 | 20 | 34,8 |
| 346 | 9.3.21 | [tag]Optimizacion del codigo del motor |  | 3h | 2019-05-20 09:00 | 2019-05-20 12:00 |  | 2019-05-20 09:00 | 2019-05-22 13:00 | 20h | 3.19d | start no earlier than 2019-05-20 09:00 | Jose Vicente Anton Coy [40%] | 1.2h | 28.8 | 151.2 | 20 |  |
| 347 | 9.3.22 | [tag]Portales |  | 0.01h | 2019-05-20 09:00 | 2019-05-20 09:00 |  | 2019-05-20 09:00 | 2019-05-21 10:00 | 9h | 3.56d | start no earlier than 2019-05-20 09:00 | Jose Vicente Anton Coy [10%]; David Ramón Sevilla [10%] | 0h | 3.64 | 36 |  |  |
| 348 | 9.3.23 | [tag]Shadow Mapping |  | 26.5h | 2019-05-15 09:00 | 2019-05-20 11:30 |  | 2019-05-15 09:00 | 2019-05-17 13:00 | 20h | 3.25d | start no earlier than 2019-05-15 09:00 | David Ramón Sevilla [20%] | 5.3h | 99 | 75.6 | 20 | 26,5 |
| 349 | 9.3.24 | [tag]Tarea secundaria para entregable arbitrario |  | 51h | 2019-05-14 09:00 | 2019-05-22 12:00 |  | 2019-05-14 09:00 | 2019-05-22 11:00 | 50h | 1.19d | start no earlier than 2019-05-14 09:00 | Jose Vicente Anton Coy [10%]; David Ramón Sevilla [10%] | 10.2h | 187.2 | 183.6 | 50 | 51 |
| 350 | 9.3.25 | [General] Scrum |  | 14h | 2019-05-06 09:00 | 2019-05-07 17:00 |  | 2019-05-06 09:00 | 2019-05-08 11:00 | 18h | 11.81d |  | Todos [10%] | 1.4h |  |  | 18 | 14 |
| 351 | 9.3.26 | [PM]Comparar la planificación prevista y real en Hito 4 |  | 2h | 2019-05-21 09:00 | 2019-05-21 11:00 |  | 2019-05-21 09:00 | 2019-05-21 12:00 | 3h | 2.31d | start no earlier than 2019-05-21 09:00 | Débora Galdeano González [10%] | 0.2h | 6.6 | 8.8 |  |  |
| 352 | 9.3.27 | [PM]Confeccionar Informes de iteración e informe resumen de Hito 4 |  | 1h | 2019-05-21 09:00 | 2019-05-21 10:00 |  | 2019-05-21 09:00 | 2019-05-21 13:00 | 4h | 2.44d | start no earlier than 2019-05-21 09:00 | Marines Ánton Castelló [10%]; Débora Galdeano González [10%] | 0.2h | 8 | 20 |  |  |
| 353 | 9.3.28 | Elaborar la presentación del Hito 4 |  | 4h | 2019-05-06 09:00 | 2019-05-06 13:00 |  | 2019-05-06 09:00 | 2019-05-07 19:00 | 16h | 13.06d |  | Marines Ánton Castelló [10%]; Débora Galdeano González [10%] | 0.8h | 20 | 68 | 16 |  |
| 354 | 10 | Version terminada | milestone | 0d | 2019-05-23 15:30 | 2019-05-23 15:30 | 291 | 2019-05-22 13:00 | 2019-05-22 13:00 | 0d | 0d | start no earlier than 2018-10-24 09:00 |  |  |  |  |  |  |
